# SRA2021-G11-项目计划v0.0.1

How a schedule from MS Project changed from version to version. A marks actual dates.

## Version 1 (saved 2021-04-01, file SRA2021-G11-项目计划v1.0.1.mpp)

Note of the change: Create SRA2021-G11-项目计划v1.0.1.mpp

| ID | WBS | Task | Duration | Start | Finish | Predecessors | Complete | Total float | Constraint |
| --- | --- | --- | --- | --- | --- | --- | --- | --- | --- |
| 1 | 1 | **渔乎APP项目开发** | 27.88d? | 2021-03-11 A | 2021-06-30 |  | 13% | 0d |  |
| 2 | 1.1 | **前期准备** | 2h? | 2021-03-11 A | 2021-03-11 A |  | 100% |  |  |
| 3 |  | 确定小组成员 | 0d? | 2021-03-11 A | 2021-03-11 A |  | 100% |  |  |
| 4 |  | G11小组成立 | 0d? | 2021-03-11 A | 2021-03-11 A |  | 100% |  |  |
| 5 |  | 确定待开发项目 | 0d? | 2021-03-11 A | 2021-03-11 A |  | 100% |  |  |
| 6 |  | G11小组第一次例会 | 0d? | 2021-03-11 A | 2021-03-11 A |  | 100% |  |  |
| 7 |  | 软件环境配置 | 1d? | 2021-03-11 A | 2021-03-11 A |  | 100% |  |  |
| 8 |  | 确定成员大致分工 | 1d? | 2021-03-11 A | 2021-03-11 A |  | 100% |  | start no earlier than 2021-03-11 |
| 9 | 1.2 | **可行性分析** | 0.25d? | 2021-03-12 A | 2021-03-13 A | 2 | 100% |  |  |
| 10 |  | 进一步研究问题 | 1d? | 2021-03-12 A | 2021-03-12 A |  | 100% |  |  |
| 11 |  | 经济可行性分析 | 1d? | 2021-03-13 A | 2021-03-13 A | 10 | 100% |  |  |
| 12 |  | 技术可行性分析 | 1d? | 2021-03-12 A | 2021-03-12 A |  | 100% |  |  |
| 13 |  | 操作可行性分析 | 1d? | 2021-03-13 A | 2021-03-13 A | 10 | 100% |  |  |
| 14 |  | 法律可行性分析 | 1d? | 2021-03-12 A | 2021-03-12 A |  | 100% |  |  |
| 15 |  | 整合可行性分析报告 | 1d? | 2021-03-13 A | 2021-03-13 A | 14, 12 | 100% |  | start no earlier than 2021-03-13 |
| 16 | 1.3 | **项目开发计划** | 0.25d? | 2021-03-12 A | 2021-03-13 A | 2 | 100% |  |  |
| 17 |  | 明确成员分工 | 1d? | 2021-03-12 A | 2021-03-12 A | 2 | 100% |  |  |
| 18 |  | 编排甘特图 | 2d? | 2021-03-12 A | 2021-03-13 A | 2 | 100% |  | start no earlier than 2021-03-12 |
| 19 |  | 编写项目开发计划、项目章程 | 1d? | 2021-03-12 A | 2021-03-12 A | 2 | 100% |  | finish no earlier than 2021-03-12 |
| 20 |  | 风险管理计划 | 1d? | 2021-03-12 A | 2021-03-12 A | 2 | 100% |  |  |
| 21 |  | 配置管理计划 | 1d? | 2021-03-12 A | 2021-03-12 A | 2 | 100% |  |  |
| 22 |  | 质量保证计划 | 1d? | 2021-03-12 A | 2021-03-12 A | 2 | 100% |  |  |
| 23 |  | 整合项目开发计划 | 1d? | 2021-03-13 A | 2021-03-13 A | 19 | 100% |  | start no earlier than 2021-03-13 |
| 24 | 1.4 | **项目计划阶段整合** | 2h? | 2021-03-14 A | 2021-03-14 A | 9, 16 | 100% |  |  |
| 25 |  | 文档、甘特图修订 | 1d? | 2021-03-14 A | 2021-03-14 A | 16 | 100% |  |  |
| 26 |  | ppt制作 | 1d? | 2021-03-14 A | 2021-03-14 A | 16 | 100% |  |  |
| 27 |  | G11小组例会 | 1d? | 2021-03-14 A | 2021-03-14 A | 16 | 100% |  |  |
| 28 | 1.5 | **软件需求分析（延后）** | 25.5d? | 2021-03-26 A | 2021-06-30 | 23 | 4% |  |  |
| 29 | 1.5.1 | **需求第一次迭代** | 8.5d? | 2021-03-26 A | 2021-04-28 |  | 12% | 15.62d |  |
| 30 | 1.5.1.1 | **需求获取** | 3.5d? | 2021-03-26 A | 2021-04-09 |  | 42% | -0.5d |  |
| 31 |  | 收集背景资料 | 2d | 2021-03-26 A | 2021-03-27 A |  | 100% |  |  |
| 32 |  | 定义项目前景和范围 | 1d? | 2021-03-28 A | 2021-03-28 A | 31 | 100% |  |  |
| 33 | 1.5.1.1.3 | **选择信息的来源** | 1d? | 2021-03-29 A | 2021-04-02 | 32 | 60% | -0.5d |  |
| 34 |  | 识别用户群 | 1d | 2021-03-29 A | 2021-03-29 A |  | 100% |  | finish no earlier than 2021-03-17 |
| 35 |  | 选择产品代言人 | 1d? | 2021-03-30 A | 2021-03-30 A | 34 | 100% |  |  |
| 36 |  | 组织焦点小组 | 1d? | 2021-03-31 A | 2021-03-31 A | 35 | 100% |  |  |
| 37 |  | 识别用户需求 | 1d? | 2021-04-01 | 2021-04-01 | 36 |  | -1.5d | start no earlier than 2021-03-30 |
| 38 |  | 识别系统事件和响应 | 1d? | 2021-04-02 | 2021-04-02 | 37 |  | -1.5d | start no earlier than 2021-03-30 |
| 39 |  | G11小组例会 | 1d? | 2021-03-28 | 2021-03-28 |  |  | 2.5d | start no earlier than 2021-03-28 |
| 40 | 1.5.1.1.5 | **选择获取方法，执行获取** | 4d? | 2021-04-05 | 2021-04-07 | 33 |  |  |  |
| 41 |  | 举行引导式需求获取讨论会 | 1d? | 2021-04-05 | 2021-04-05 |  |  | -2d |  |
| 42 |  | 观察用户如何完成工作 | 1d? | 2021-04-06 | 2021-04-06 | 41 |  | -2d |  |
| 43 |  | 分发调查问卷 | 1d? | 2021-04-07 | 2021-04-07 | 42 |  | -2d |  |
| 44 | 1.5.1.1.6 | **记录获取结果** | 0.25d? | 2021-04-08 | 2021-04-09 | 40 |  | -2d |  |
| 45 |  | 分析文档 | 1d? | 2021-04-08 | 2021-04-08 | 43 |  | -2d |  |
| 46 |  | 检查问题报告 | 1d? | 2021-04-09 | 2021-04-09 | 45 |  | -2d |  |
| 47 |  | G11小组例会 | 2h | 2021-04-07 | 2021-04-07 |  |  | -1.5d | start no earlier than 2021-04-07 |
| 48 | 1.5.1.2 | **需求分析** | 8d? | 2021-04-10 | 2021-04-28 | 44 |  |  |  |
| 49 |  | 背景分析 | 1d | 2021-04-10 | 2021-04-10 | 30 |  | -2d |  |
| 50 |  | 确定系统边界 | 1d | 2021-04-11 | 2021-04-11 | 49 |  | -2d |  |
| 51 |  | G11小组例会 | 1d? | 2021-04-11 | 2021-04-11 | 49 |  | 4d |  |
| 52 |  | 需求建模 | 3d | 2021-04-12 | 2021-04-14 | 50 |  | -2d |  |
| 53 |  | G11小组例会 | 1d? | 2021-04-14 | 2021-04-14 |  |  | 3.25d | start no earlier than 2021-04-14 |
| 54 |  | 需求细化 | 1d? | 2021-04-15 | 2021-04-15 | 52 |  | -2d |  |
| 55 |  | 确定优先级 | 1d? | 2021-04-16 | 2021-04-16 | 54 |  | -2d |  |
| 56 |  | 需求协商 | 3d | 2021-04-17 | 2021-04-19 | 55 |  | -2d |  |
| 57 |  | G11小组例会 | 2h | 2021-04-18 | 2021-04-18 |  |  | 2d | start no earlier than 2021-04-18 |
| 58 |  | 数据字典创建 | 1d? | 2021-04-20 | 2021-04-20 | 56 |  | 0d |  |
| 59 |  | 原型开发 | 6d? | 2021-04-20 | 2021-04-25 | 56 |  | -2d |  |
| 60 |  | G11小组例会 | 2h | 2021-04-24 | 2021-04-24 |  |  | 16.75d | start no earlier than 2021-04-24 |
| 61 |  | 原型确认 | 1d? | 2021-04-25 | 2021-04-28 | 59 |  | -2d |  |
| 62 |  | 建立子系统 | 1d? | 2021-04-20 | 2021-04-20 | 56 |  | 0d |  |
| 63 | 1.5.1.3 | **编写需求规格说明书** | 4h? | 2021-04-20 | 2021-04-21 | 48 |  |  |  |
| 64 |  | G11小组例会 | 2h | 2021-04-21 | 2021-04-21 |  |  | 17.38d | start no earlier than 2021-04-21 |
| 65 |  | 创建需求跟踪能力矩阵 | 1d? | 2021-04-21 | 2021-04-21 |  |  | 0d |  |
| 66 | 1.5.1.4 | **需求验证** | 0.5d? | 2021-04-21 | 2021-04-23 | 63 |  | 0.25d |  |
| 67 |  | 测试需求 | 1d? | 2021-04-21 | 2021-04-21 |  |  | 2.5d |  |
| 68 |  | 编写测试用例 | 1d? | 2021-04-21 | 2021-04-21 | 63 |  | 17.5d |  |
| 69 |  | 原型修改 | 1d? | 2021-04-21 | 2021-04-21 |  |  | 17d |  |
| 70 |  | 原型确认 | 1d? | 2021-04-22 | 2021-04-22 | 69 |  | 17d |  |

| ID | WBS | Task | Duration | Start | Finish | Predecessors | Total float | Constraint |
| --- | --- | --- | --- | --- | --- | --- | --- | --- |
| 71 |  | 编写用户手册 | 1d? | 2021-04-23 | 2021-04-23 | 70 | 17d |  |
| 72 | 1.5.1.5 | **需求管理** | 0.75d? | 2021-04-20 | 2021-04-23 | 57 | 0.75d |  |
| 73 | 1.5.1.5.1 | **建立需求基线** | 0.5d? | 2021-04-20 | 2021-04-22 | 57 | 0.25d |  |
| 74 |  | 更新需求优先级 | 1d? | 2021-04-20 | 2021-04-20 | 56 | 3d |  |
| 75 |  | 工作量估算 | 1d? | 2021-04-20 | 2021-04-20 | 56 | 3d |  |
| 76 |  | 未完成项合并 | 1d? | 2021-04-22 | 2021-04-22 | 67 | 2.5d |  |
| 77 |  | 建立需求跟踪信息 | 1d? | 2021-04-21 | 2021-04-21 | 75 | 3.5d |  |
| 78 |  | 后向跟踪 | 1d? | 2021-04-22 | 2021-04-22 | 67 | 3.25d |  |
| 79 |  | 前向跟踪 | 1d? | 2021-04-22 | 2021-04-22 | 67 | 3.25d |  |
| 80 |  | G11小组第十次会议 | 1d? | 2021-04-23 | 2021-04-23 | 73 | 3d |  |
| 81 | 1.5.1.5.6 | **进行变更控制** | 0d? | 2021-04-23 | 2021-04-23 | 73 | 0.25d |  |
| 82 |  | 业务影响分析 | 1d? | 2021-04-23 | 2021-04-23 | 73 | 2.5d |  |
| 83 |  | 技术影响分析 | 1d? | 2021-04-23 | 2021-04-23 | 73 | 2.5d |  |
| 84 |  | 项目影响分析 | 1d? | 2021-04-23 | 2021-04-23 | 73 | 2.5d |  |
| 85 | 1.5.2 | **需求第二次迭代** | 3d? | 2021-04-25 | 2021-05-07 | 81 | 0d |  |
| 86 |  | G11小组例会 | 2h | 2021-04-25 | 2021-04-25 |  | 5d | start no earlier than 2021-04-25 |
| 87 | 1.5.2.2 | **需求获取** | 2h? | 2021-04-25 | 2021-04-25 |  |  |  |
| 88 |  | 用户访谈 | 1d? | 2021-04-25 | 2021-04-25 | 72 | 2.75d |  |
| 89 | 1.5.2.3 | **需求分析** | 0.75d? | 2021-04-26 | 2021-04-29 | 87 | 1d |  |
| 90 |  | 更新需求建模 | 1d? | 2021-04-26 | 2021-04-26 | 88 | 3d |  |
| 91 |  | 更新需求细化 | 2d? | 2021-04-26 | 2021-04-27 | 88 | 2.75d |  |
| 92 |  | 原型更新 | 2d? | 2021-04-26 | 2021-04-27 | 88 | 3.25d |  |
| 93 |  | 数据字典更新 | 2d? | 2021-04-28 | 2021-04-29 | 91, 90 | 2.75d |  |
| 94 |  | 子系统更新 | 1d? | 2021-04-28 | 2021-04-28 | 91, 90 | 3d |  |
| 95 |  | G11小组例会 | 1d? | 2021-04-28 | 2021-04-28 | 91, 90 | 4.25d |  |
| 96 |  | 更新需求规格说明书 | 2d | 2021-04-28 | 2021-04-29 | 91 | 3.25d |  |
| 97 | 1.5.2.6 | **需求验证** | 4d? | 2021-05-05 | 2021-05-07 | 96 |  |  |
| 98 |  | 测试需求 | 2d? | 2021-05-05 | 2021-05-06 | 91 | 0d |  |
| 99 |  | 原型修改 | 2d? | 2021-05-05 | 2021-05-06 | 92 | -0.25d |  |
| 100 |  | 原型确认 | 1d? | 2021-05-07 | 2021-05-07 | 99 | -0.25d |  |
| 101 | 1.5.2.7 | **需求管理** | 2h? | 2021-05-07 | 2021-05-07 | 97 |  |  |
| 102 |  | 更新需求基线 | 1d? | 2021-05-07 | 2021-05-07 | 98 | 0d |  |
| 103 |  | 更新需求跟踪信息 | 1d? | 2021-05-07 | 2021-05-07 | 98 | 0d |  |
| 104 |  | 后向跟踪 | 1d? | 2021-05-07 | 2021-05-07 | 98 | 0d |  |
| 105 |  | 前向跟踪 | 1d? | 2021-05-07 | 2021-05-07 | 98 | 0d |  |
| 106 |  | 更新变更控制 | 1d? | 2021-05-07 | 2021-05-07 | 98 | 0d |  |
| 107 | 1.5.3 | **需求第三次迭代** | 2d? | 2021-05-08 | 2021-05-16 | 85 | 0d |  |
| 108 | 1.5.3.1 | **需求获取** | 2h? | 2021-05-08 | 2021-05-08 |  |  |  |
| 109 |  | 用户访谈 | 1d? | 2021-05-08 | 2021-05-08 | 85 | 0d |  |
| 110 | 1.5.3.2 | **需求分析** | 0.75d? | 2021-05-09 | 2021-05-12 | 108 | 0d |  |
| 111 |  | G11小组例会 | 2h | 2021-05-09 | 2021-05-09 |  | 0.75d | start no earlier than 2021-05-09 |
| 112 |  | 更新需求建模 | 2d? | 2021-05-09 | 2021-05-10 | 109 | 0d |  |
| 113 |  | 更新需求细化 | 1d? | 2021-05-09 | 2021-05-09 | 109 | 0.25d |  |
| 114 |  | 原型更新 | 2d? | 2021-05-09 | 2021-05-10 | 109 | 0.5d |  |
| 115 |  | 数据字典更新 | 2d? | 2021-05-11 | 2021-05-12 | 112, 113 | 0d |  |
| 116 |  | 子系统更新 | 1d? | 2021-05-11 | 2021-05-11 | 112, 113 | 0.25d |  |
| 117 |  | G11小组例会 | 1d? | 2021-05-12 | 2021-05-12 | 112, 113 | 1d | start no earlier than 2021-05-12 |
| 118 |  | 更新需求规格说明书 | 1d? | 2021-05-13 | 2021-05-13 | 110 | 0.75d |  |
| 119 | 1.5.3.5 | **需求验证** | 0.5d? | 2021-05-13 | 2021-05-15 | 110 | 0d |  |
| 120 |  | 测试需求 | 2d? | 2021-05-13 | 2021-05-14 | 113 | 0d |  |
| 121 |  | 原型修改 | 2d? | 2021-05-13 | 2021-05-14 | 114 | 0.25d |  |
| 122 |  | 原型确认 | 1d? | 2021-05-15 | 2021-05-15 | 121 | 0.25d |  |
| 123 | 1.5.3.6 | **需求管理** | 0d? | 2021-05-15 | 2021-05-15 | 120 | 0d |  |
| 124 |  | 更新需求基线 | 1d? | 2021-05-15 | 2021-05-15 | 120 | 0d |  |
| 125 |  | 更新需求跟踪信息 | 1d? | 2021-05-15 | 2021-05-15 | 120 | 0d |  |
| 126 |  | 后向跟踪 | 1d? | 2021-05-15 | 2021-05-15 | 120 | 0d |  |
| 127 |  | 前向跟踪 | 1d? | 2021-05-15 | 2021-05-15 | 120 | 0d |  |
| 128 |  | 更新变更控制 | 1d? | 2021-05-15 | 2021-05-15 | 120 | 0d |  |
| 129 |  | G11小组第十六次会议 | 1d? | 2021-05-16 | 2021-05-16 | 123 | 0d | start no earlier than 2021-05-05 |
| 130 | 1.5.4 | **需求第四次迭代** | 1.75d? | 2021-05-17 | 2021-05-24 | 107 | 0d |  |
| 131 | 1.5.4.1 | **需求获取** | 2h? | 2021-05-17 | 2021-05-17 |  |  |  |
| 132 |  | 用户访谈 | 1d? | 2021-05-17 | 2021-05-17 | 107 | 0d |  |
| 133 | 1.5.4.2 | **需求分析** | 0.75d? | 2021-05-18 | 2021-05-21 | 131 | 0d |  |
| 134 |  | 更新需求建模 | 2d? | 2021-05-18 | 2021-05-19 | 132 | 0d |  |
| 135 |  | 更新需求细化 | 1d? | 2021-05-18 | 2021-05-18 | 132 | 0.25d |  |
| 136 |  | 原型更新 | 2d? | 2021-05-18 | 2021-05-19 | 132 | 0.5d |  |
| 137 |  | G11小组例会 | 2h | 2021-05-19 | 2021-05-19 |  | 0.5d | start no earlier than 2021-05-19 |
| 138 |  | 数据字典更新 | 2d? | 2021-05-20 | 2021-05-21 | 134, 135 | 0d |  |
| 139 |  | 子系统更新 | 1d? | 2021-05-20 | 2021-05-20 | 134, 135 | 0.25d |  |
| 140 |  | 更新需求规格说明书 | 1d? | 2021-05-22 | 2021-05-22 | 133 | 0.25d |  |

| ID | WBS | Task | Duration | Start | Finish | Predecessors | Total float | Constraint |
| --- | --- | --- | --- | --- | --- | --- | --- | --- |
| 141 | 1.5.4.4 | **需求验证** | 0.5d? | 2021-05-22 | 2021-05-24 | 133 | 0d |  |
| 142 |  | 测试需求 | 2d? | 2021-05-22 | 2021-05-23 | 135 | 0d |  |
| 143 |  | 原型修改 | 2d? | 2021-05-22 | 2021-05-23 | 136 | 0d |  |
| 144 |  | G11小组例会 | 1d? | 2021-05-23 | 2021-05-23 | 140 | 0.25d | start no earlier than 2021-05-12 |
| 145 |  | 原型确认 | 1d? | 2021-05-24 | 2021-05-24 | 143 | 0d |  |
| 146 | 1.5.4.5 | **需求管理** | 0d? | 2021-05-24 | 2021-05-24 | 142 | 0d |  |
| 147 |  | 更新需求基线 | 1d? | 2021-05-24 | 2021-05-24 | 142 | 0d |  |
| 148 |  | 更新需求跟踪信息 | 1d? | 2021-05-24 | 2021-05-24 | 142 | 0d |  |
| 149 |  | 后向跟踪 | 1d? | 2021-05-24 | 2021-05-24 | 142 | 0d |  |
| 150 |  | 前向跟踪 | 1d? | 2021-05-24 | 2021-05-24 | 142 | 0d |  |
| 151 |  | 更新变更控制 | 1d? | 2021-05-24 | 2021-05-24 | 142 | 0d |  |
| 152 | 1.5.5 | **需求第五次迭代** | 1.75d? | 2021-05-25 | 2021-06-01 | 130 | 0d |  |
| 153 | 1.5.5.1 | **需求获取** | 2h? | 2021-05-25 | 2021-05-25 |  |  |  |
| 154 |  | 用户访谈 | 1d? | 2021-05-25 | 2021-05-25 | 130 | 3.25d |  |
| 155 | 1.5.5.2 | **需求分析** | 0.75d? | 2021-05-26 | 2021-05-29 | 153 | 3.25d |  |
| 156 |  | 更新需求建模 | 2d? | 2021-05-26 | 2021-05-27 | 154 | 3.25d |  |
| 157 |  | 更新需求细化 | 1d? | 2021-05-26 | 2021-05-26 | 154 | 3.5d |  |
| 158 |  | G11小组例会 | 1d? | 2021-05-26 | 2021-05-26 | 154 | 4d | start no earlier than 2021-05-16 |
| 159 |  | 原型更新 | 2d? | 2021-05-26 | 2021-05-27 | 154 | 3.75d |  |
| 160 |  | 数据字典更新 | 2d? | 2021-05-28 | 2021-05-29 | 156, 157 | 3.25d |  |
| 161 |  | 子系统更新 | 1d? | 2021-05-28 | 2021-05-28 | 156, 157 | 3.5d |  |
| 162 |  | G11小组例会 | 1d? | 2021-05-30 | 2021-05-30 | 155 | 3.75d |  |
| 163 |  | 更新需求规格说明书 | 1d? | 2021-05-30 | 2021-05-30 | 155 | 3.75d |  |
| 164 | 1.5.5.5 | **需求验证** | 0.5d? | 2021-05-30 | 2021-06-01 | 155 | 3.25d |  |
| 165 |  | 测试需求 | 2d? | 2021-05-30 | 2021-05-31 | 157 | 3.25d |  |
| 166 |  | 原型修改 | 2d? | 2021-05-30 | 2021-05-31 | 159 | 3.25d |  |
| 167 |  | 原型确认 | 1d? | 2021-06-01 | 2021-06-01 | 166 | 3.25d |  |
| 168 | 1.5.5.6 | **需求管理** | 0d? | 2021-06-01 | 2021-06-01 | 165 | 3.25d |  |
| 169 |  | 更新需求基线 | 1d? | 2021-06-01 | 2021-06-01 | 165 | 3.25d |  |
| 170 |  | 跟新需求跟踪信息 | 1d? | 2021-06-01 | 2021-06-01 | 165 | 3.25d |  |
| 171 |  | 后向跟踪 | 1d? | 2021-06-01 | 2021-06-01 | 165 | 3.25d |  |
| 172 |  | 前向跟踪 | 1d? | 2021-06-01 | 2021-06-01 | 165 | 3.25d |  |
| 173 |  | 更新变更控制 | 1d? | 2021-06-01 | 2021-06-01 | 165 | 3.25d |  |
| 174 | 1.6 | **设计与开发阶段** | 2d? | 2021-06-02 | 2021-06-10 | 152 | 3.25d |  |
| 175 | 1.6.1 | **需求变更（延期概要设计）** | 1d? | 2021-06-02 | 2021-06-06 |  | 3.25d |  |
| 176 |  | 访谈确认变更点 | 1d? | 2021-06-02 | 2021-06-02 | 167 | 3.25d |  |
| 177 |  | G11小组第二十一次会议 | 2h | 2021-06-02 | 2021-06-02 |  | 4.25d | finish no earlier than 2021-06-02 |
| 178 |  | 导入需求至需求管理工具 | 1d? | 2021-06-03 | 2021-06-03 | 176 | 3.25d |  |
| 179 |  | 需求影响分析报告 | 2d | 2021-06-03 | 2021-06-04 | 176 | 3.75d |  |
| 180 |  | 导入界面原型至需求管理工具 | 1d? | 2021-06-03 | 2021-06-03 | 176 | 3.25d |  |
| 181 |  | 导入测试用例至需求管理工具 | 1d? | 2021-06-03 | 2021-06-03 | 176 | 3.25d |  |
| 182 |  | 需求管理工具中评价工作量 | 1d? | 2021-06-04 | 2021-06-04 | 178, 180, 181 | 3.25d |  |
| 183 |  | 访谈确认变更 | 1d? | 2021-06-05 | 2021-06-05 | 182 | 3.25d |  |
| 184 |  | G11小组例会 | 1d? | 2021-06-06 | 2021-06-06 | 183 | 3.25d |  |
| 185 |  | 修订文档 | 1d? | 2021-06-06 | 2021-06-06 | 183 | 3.25d |  |
| 186 | 1.6.2 | **概要设计** | 0.5d? | 2021-06-07 | 2021-06-09 | 175 | 3.25d |  |
| 187 |  | 设计数据库 | 1d? | 2021-06-07 | 2021-06-07 | 185 | 3.25d |  |
| 188 |  | 体系结构设计 | 1d? | 2021-06-07 | 2021-06-07 | 185 | 3.25d |  |
| 189 |  | 编写概要设计文档 | 2d? | 2021-06-08 | 2021-06-09 | 187, 188 | 5.25d |  |
| 190 |  | 编写测试计划 | 2d? | 2021-06-08 | 2021-06-09 | 187, 188 | 5.25d |  |
| 191 | 1.6.3 | **详细设计** | 0.25d? | 2021-06-08 | 2021-06-09 | 185 | 3.25d |  |
| 192 |  | 编写接口文档 | 1d? | 2021-06-08 | 2021-06-08 | 187, 188 | 3.5d |  |
| 193 |  | 编写详细设计文档 | 2d? | 2021-06-08 | 2021-06-09 | 187, 188 | 3.25d |  |
| 194 |  | G11小组例会 | 1d? | 2021-06-09 | 2021-06-09 |  | 5.25d | start no earlier than 2021-06-09 |
| 195 |  | 整合设计文档 | 1d? | 2021-06-10 | 2021-06-10 | 191 | 3.25d | start no earlier than 2021-06-09 |
| 196 | 1.7 | **实现、测试阶段** | 4.75d? | 2021-06-15 | 2021-06-20 | 195 |  |  |
| 197 |  | 客户端编码 | 2d? | 2021-06-15 | 2021-06-16 | 195 | 2.25d |  |
| 198 |  | 后端编码 | 2d? | 2021-06-15 | 2021-06-16 | 195 | 2.25d |  |
| 199 |  | 管理员端编码 | 2d? | 2021-06-15 | 2021-06-16 | 195 | 2.25d |  |
| 200 |  | G11小组例会 | 2h | 2021-06-16 | 2021-06-16 |  | 3.5d | start no earlier than 2021-06-16 |
| 201 |  | 单元测试 | 2d | 2021-06-17 | 2021-06-18 | 197, 198, 199 | 2.25d |  |
| 202 |  | 集成测试 | 2d | 2021-06-19 | 2021-06-20 | 201 | 2.25d |  |
| 203 |  | G11小组例会 | 2h | 2021-06-20 | 2021-06-20 |  | 2.5d | start no earlier than 2021-06-20 |
| 204 |  | 项目收尾 | 1d? | 2021-06-21 | 2021-06-21 | 196 | 2.25d |  |

## Version 2 (saved 2021-04-01, file SRA2021-G11-项目计划v1.0.1.mpp)

Note of the change: Merge branch 'main' of https://github.com/SRayJay/SRA2021-G11 into main

Last finish stays 2021-06-30. Complete tasks 27 → 28.

Added:

| ID | Task | Duration | Start | Finish | Predecessors | Resources |
| --- | --- | --- | --- | --- | --- | --- |
| 35 | 确定用户代表 | 1d | 2021-03-30 A | 2021-03-30 A | 34 | 黄文涛 |

Removed: 36 组织焦点小组

Changed:

| ID | Task | Start | Finish | Duration | Complete | Total float | Predecessors | Other |
| --- | --- | --- | --- | --- | --- | --- | --- | --- |
| 30 | **需求获取** |  |  |  | 42% → 46% |  |  |  |
| 33 | **选择信息的来源** |  |  |  | 60% → 53% |  |  |  |
| 36 | 选择产品代言人 | 2021-03-30 A → 2021-03-31 A (+1d) | 2021-03-30 A → 2021-03-31 A (+1d) | 1d? → 2h |  |  | 34 → 35 | constraint none → start no earlier than 2021-03-31 |
| 37 | 识别用户需求 | 2021-04-01 → 2021-03-31 (-1d) |  |  |  |  | 组织焦点小组 → 36 |  |
| 38 | 识别系统事件和响应 | 2021-04-02 → 2021-04-01 (-1d) |  |  |  |  |  |  |
| 39 | G11小组例会 | 2021-03-28 A | 2021-03-28 A |  | 0% → 100% | 2.5d → none |  |  |

## Version 3 (saved 2021-04-01, file SRA2021-G11-项目计划v1.0.2.mpp)

Note of the change: 更新甘特图

Last finish stays 2021-06-30.

Changed:

| ID | Task | Total float | Other |
| --- | --- | --- | --- |
| 34 | 识别用户群 |  | resources 黄文涛 → 伊君琛 |
| 35 | 确定用户代表 |  | resources 黄文涛 → 伊君琛 |
| 37 | 识别用户需求（延后） |  | was named 识别用户需求 |
| 38 | 识别系统事件和响应 | -1.5d → -0.25d | resources 黄文涛 → 伊君琛 |
| 50 | 确定系统边界 |  | resources 黄文涛 → 伊君琛 |
| 177 | G11小组例会 |  | was named G11小组第二十一次会议 |

## Version 4 (saved 2021-04-04, file SRA2021-G11-项目计划v1.0.3.mpp)

Note of the change: 更新甘特图

Last finish stays 2021-06-30. Complete tasks 28 → 33.

Added:

| ID | Task | Duration | Start | Finish | Predecessors | Constraint | Resources |
| --- | --- | --- | --- | --- | --- | --- | --- |
| 23 | 沟通管理计划 | 2h | 2021-03-12 A | 2021-03-12 A | 2 | start no earlier than 2021-03-12 | 梅一枝 |
| 24 | 成本管理计划 | 2h | 2021-03-12 A | 2021-03-12 A | 2 | start no earlier than 2021-03-12 | 梅一枝 |
| 25 | 资源管理计划 | 2h | 2021-03-12 A | 2021-03-12 A | 2 | start no earlier than 2021-03-12 | 沈瑞杰 |
| 26 | 采购管理计划 | 2h | 2021-03-12 A | 2021-03-12 A | 2 | start no earlier than 2021-03-12 | 沈瑞杰 |
| 27 | 范围管理计划 | 2h | 2021-03-12 A | 2021-03-12 A | 2 | start no earlier than 2021-03-12 | 沈瑞杰 |

Changed:

| ID | Task | Start | Finish | Duration | Complete | Total float | Predecessors | Other |
| --- | --- | --- | --- | --- | --- | --- | --- | --- |
| 1 | **渔乎APP项目开发** |  |  |  | 13% → 14% |  |  |  |
| 33 | **软件需求分析（延后）** |  |  |  | 4% → 5% |  |  |  |
| 34 | **需求第一次迭代** |  | 2021-04-28 → 2021-05-07 (+9d) | 8.5d? → 10.5d? |  | 15.62d → 13.62d |  |  |
| 35 | **需求获取** |  | 2021-04-09 → 2021-04-13 (+4d) | 3.5d? → 4.5d? |  | -0.5d → 1d |  |  |
| 38 | **选择信息的来源** |  | 2021-04-02 → 2021-04-09 (+7d) | 1d? → 2.75d? |  | -0.5d → 0.5d |  |  |
| 42 | 识别用户需求（延后） | 2021-03-31 → 2021-04-08 (+8d) | 2021-04-01 → 2021-04-08 (+7d) |  |  | -1.5d → 0.5d |  | constraint start no earlier than 2021-03-30 → start no earlier than 2021-04-08 |
| 43 | 识别系统事件和响应(延后) | 2021-04-01 → 2021-04-09 (+8d) | 2021-04-02 → 2021-04-09 (+7d) |  |  | -0.25d → 0.5d |  | was named 识别系统事件和响应 |
| 45 | **选择获取方法，执行获取** | 2021-04-05 → 2021-04-09 (+4d) | 2021-04-07 → 2021-04-11 (+4d) |  |  |  |  |  |
| 46 | 举行引导式需求获取讨论会 | 2021-04-05 → 2021-04-09 (+4d) | 2021-04-05 → 2021-04-09 (+4d) |  |  | -2d → 0.75d |  |  |
| 47 | 观察用户如何完成工作 | 2021-04-06 → 2021-04-10 (+4d) | 2021-04-06 → 2021-04-10 (+4d) |  |  | -2d → 0.75d |  |  |
| 48 | 分发调查问卷 | 2021-04-07 → 2021-04-11 (+4d) | 2021-04-07 → 2021-04-11 (+4d) |  |  | -2d → 0.75d |  |  |
| 49 | **记录获取结果** | 2021-04-08 → 2021-04-12 (+4d) | 2021-04-09 → 2021-04-13 (+4d) |  |  | -2d → 0.75d |  |  |
| 50 | 分析文档 | 2021-04-08 → 2021-04-12 (+4d) | 2021-04-08 → 2021-04-12 (+4d) |  |  | -2d → 0.75d |  |  |
| 51 | 检查问题报告 | 2021-04-09 → 2021-04-13 (+4d) | 2021-04-09 → 2021-04-13 (+4d) |  |  | -2d → 0.75d |  |  |
| 53 | **需求分析** | 2021-04-10 → 2021-04-14 (+4d) |  | 8d? → 7d? |  |  |  |  |
| 54 | 背景分析 | 2021-04-10 → 2021-04-14 (+4d) | 2021-04-10 → 2021-04-14 (+4d) |  |  | -2d → 0.75d |  |  |
| 55 | 确定系统边界 | 2021-04-11 → 2021-04-15 (+4d) | 2021-04-11 → 2021-04-15 (+4d) |  |  | -2d → 0.75d |  |  |
| 56 | G11小组例会 | 2021-04-11 → 2021-04-15 (+4d) | 2021-04-11 → 2021-04-15 (+4d) |  |  | 2.25d → 4.75d |  |  |
| 57 | 需求建模 | 2021-04-12 → 2021-04-16 (+4d) | 2021-04-14 → 2021-04-18 (+4d) |  |  | -2d → 0.75d |  |  |
| 59 | 需求细化 | 2021-04-15 → 2021-04-19 (+4d) | 2021-04-15 → 2021-04-19 (+4d) |  |  | -2d → 0.75d |  |  |
| 60 | 确定优先级 | 2021-04-16 → 2021-04-20 (+4d) | 2021-04-16 → 2021-04-20 (+4d) |  |  | -2d → 0.75d |  |  |
| 61 | 需求协商 | 2021-04-17 → 2021-04-21 (+4d) | 2021-04-19 → 2021-04-22 (+3d) | 3d → 2d |  | -2d → 0.75d |  |  |
| 63 | 数据字典创建 | 2021-04-20 → 2021-04-23 (+3d) | 2021-04-20 → 2021-04-23 (+3d) |  |  | 0d → 2.75d |  |  |
| 65 | 原型开发 | 2021-04-20 → 2021-04-23 (+3d) | 2021-04-25 → 2021-04-28 (+3d) |  |  | -2d → 0.75d |  |  |
| 66 | G11小组例会 |  |  |  |  |  |  | resources 黄文涛 → G11小组 |
| 67 | 原型确认 | 2021-04-25 → 2021-04-28 (+3d) | 2021-04-28 → 2021-05-01 (+3d) |  |  | -2d → 0.75d |  |  |
| 68 | 建立子系统 | 2021-04-20 → 2021-04-23 (+3d) | 2021-04-20 → 2021-04-23 (+3d) |  |  | 0d → 2.75d |  |  |
| 69 | **编写需求规格说明书** | 2021-04-20 → 2021-04-29 (+9d) | 2021-04-21 → 2021-05-01 (+10d) | 4h? → 32h? |  |  |  |  |
| 70 | 创建需求跟踪能力矩阵 | 2021-04-21 → 2021-04-29 (+8d) | 2021-04-21 → 2021-04-29 (+8d) |  |  | 0d → 1.5d |  |  |
| 71 | **需求验证** | 2021-04-21 → 2021-05-05 (+14d) | 2021-04-23 → 2021-05-07 (+14d) | 0.5d? → 4d? |  | 0.25d → none |  |  |
| 72 | 测试需求 | 2021-04-21 → 2021-05-05 (+14d) | 2021-04-21 → 2021-05-05 (+14d) |  |  |  |  |  |
| 73 | 编写测试用例 | 2021-04-21 → 2021-05-05 (+14d) | 2021-04-21 → 2021-05-05 (+14d) |  |  | 17.5d → 0.75d |  |  |
| 74 | 原型修改 | 2021-04-21 → 2021-05-05 (+14d) | 2021-04-21 → 2021-05-05 (+14d) |  |  | 17d → 0.25d |  |  |
| 75 | 原型确认 | 2021-04-22 → 2021-05-06 (+14d) | 2021-04-22 → 2021-05-06 (+14d) |  |  | 17d → 0.25d |  |  |
| 76 | 编写用户手册 | 2021-04-23 → 2021-05-07 (+14d) | 2021-04-23 → 2021-05-07 (+14d) |  |  | 17d → 0.25d |  |  |
| 77 | **需求管理** | 2021-04-20 → 2021-04-23 (+3d) | 2021-04-23 → 2021-05-07 (+14d) | 0.75d? → 3.5d? |  | 0.75d → 0.25d | 62 → 61 |  |
| 78 | **建立需求基线** | 2021-04-20 → 2021-04-23 (+3d) | 2021-04-22 → 2021-05-06 (+14d) | 0.5d? → 3.25d? |  |  | 62 → 61 |  |
| 79 | 更新需求优先级 | 2021-04-20 → 2021-04-23 (+3d) | 2021-04-20 → 2021-04-23 (+3d) |  |  | 0.75d → 3.5d |  |  |
| 80 | 工作量估算 | 2021-04-20 → 2021-04-23 (+3d) | 2021-04-20 → 2021-04-23 (+3d) |  |  | 0.75d → 3.5d |  |  |
| 81 | 未完成项合并 | 2021-04-22 → 2021-05-06 (+14d) | 2021-04-22 → 2021-05-06 (+14d) |  |  |  |  |  |
| 82 | 建立需求跟踪信息 | 2021-04-21 → 2021-04-24 (+3d) | 2021-04-21 → 2021-04-24 (+3d) |  |  | 1.75d → 3.5d |  |  |
| 83 | 后向跟踪 | 2021-04-22 → 2021-05-06 (+14d) | 2021-04-22 → 2021-05-06 (+14d) |  |  | 1.5d → 0.5d |  |  |
| 84 | 前向跟踪 | 2021-04-22 → 2021-05-06 (+14d) | 2021-04-22 → 2021-05-06 (+14d) |  |  | 1.5d → 0.5d |  |  |
| 85 | G11小组第十次会议 | 2021-04-23 → 2021-05-07 (+14d) | 2021-04-23 → 2021-05-07 (+14d) |  |  | 1.25d → 0.25d |  |  |
| 86 | **进行变更控制** | 2021-04-23 → 2021-05-07 (+14d) | 2021-04-23 → 2021-05-07 (+14d) |  |  |  |  |  |
| 87 | 业务影响分析 | 2021-04-23 → 2021-05-07 (+14d) | 2021-04-23 → 2021-05-07 (+14d) |  |  |  |  |  |
| 88 | 技术影响分析 | 2021-04-23 → 2021-05-07 (+14d) | 2021-04-23 → 2021-05-07 (+14d) |  |  |  |  |  |
| 89 | 项目影响分析 | 2021-04-23 → 2021-05-07 (+14d) | 2021-04-23 → 2021-05-07 (+14d) |  |  |  |  |  |
| 90 | **需求第二次迭代** | 2021-04-25 → 2021-05-08 (+13d) | 2021-05-07 → 2021-05-17 (+10d) | 3d? → 5.75d? |  | 0d → none | 86 → 34 |  |
| 91 | G11小组例会 | 2021-04-25 → 2021-05-08 (+13d) | 2021-04-25 → 2021-05-08 (+13d) |  |  | 3d → 13.25d |  | constraint start no earlier than 2021-04-25 → start no earlier than 2021-05-08 |
| 92 | **需求获取** | 2021-04-25 → 2021-05-09 (+14d) | 2021-04-25 → 2021-05-09 (+14d) |  |  |  |  |  |
| 93 | 用户访谈 | 2021-04-25 → 2021-05-09 (+14d) | 2021-04-25 → 2021-05-09 (+14d) |  |  | 1d → 0d |  |  |
| 94 | **需求分析** | 2021-04-26 → 2021-05-10 (+14d) | 2021-04-29 → 2021-05-13 (+14d) |  |  | 1d → 0d |  |  |
| 95 | 更新需求建模 | 2021-04-26 → 2021-05-10 (+14d) | 2021-04-26 → 2021-05-10 (+14d) |  |  | 2.25d → 1.25d |  |  |
| 96 | 更新需求细化 | 2021-04-26 → 2021-05-10 (+14d) | 2021-04-27 → 2021-05-11 (+14d) |  |  | 1d → 0d |  |  |
| 97 | 原型更新 | 2021-04-26 → 2021-05-10 (+14d) | 2021-04-27 → 2021-05-11 (+14d) |  |  | 1.5d → 0.5d |  |  |
| 98 | 数据字典更新 | 2021-04-28 → 2021-05-12 (+14d) | 2021-04-29 → 2021-05-13 (+14d) |  |  | 2d → 1d |  |  |
| 99 | 子系统更新 | 2021-04-28 → 2021-05-12 (+14d) | 2021-04-28 → 2021-05-12 (+14d) |  |  | 2.25d → 1.25d |  |  |
| 100 | G11小组例会 | 2021-04-28 → 2021-05-12 (+14d) | 2021-04-28 → 2021-05-12 (+14d) |  |  | 2.25d → 1.25d |  |  |
| 101 | 更新需求规格说明书 | 2021-04-28 → 2021-05-12 (+14d) | 2021-04-29 → 2021-05-13 (+14d) |  |  | 1d → 0d |  |  |
| 102 | **需求验证** | 2021-05-05 → 2021-05-14 (+9d) | 2021-05-07 → 2021-05-16 (+9d) |  |  |  |  |  |
| 103 | 测试需求 | 2021-05-05 → 2021-05-14 (+9d) | 2021-05-06 → 2021-05-15 (+9d) |  |  | 0d → 0.25d |  |  |
| 104 | 原型修改 | 2021-05-05 → 2021-05-14 (+9d) | 2021-05-06 → 2021-05-15 (+9d) |  |  | -0.25d → 0d |  |  |
| 105 | 原型确认 | 2021-05-07 → 2021-05-16 (+9d) | 2021-05-07 → 2021-05-16 (+9d) |  |  | -0.25d → 0d |  |  |
| 106 | **需求管理** | 2021-05-07 → 2021-05-17 (+10d) | 2021-05-07 → 2021-05-17 (+10d) |  |  |  |  |  |
| 107 | 更新需求基线 | 2021-05-07 → 2021-05-17 (+10d) | 2021-05-07 → 2021-05-17 (+10d) |  |  |  |  |  |
| 108 | 更新需求跟踪信息 | 2021-05-07 → 2021-05-17 (+10d) | 2021-05-07 → 2021-05-17 (+10d) |  |  |  |  |  |
| 109 | 后向跟踪 | 2021-05-07 → 2021-05-17 (+10d) | 2021-05-07 → 2021-05-17 (+10d) |  |  |  |  |  |
| 110 | 前向跟踪 | 2021-05-07 → 2021-05-17 (+10d) | 2021-05-07 → 2021-05-17 (+10d) |  |  |  |  |  |
| 111 | 更新变更控制 | 2021-05-07 → 2021-05-17 (+10d) | 2021-05-07 → 2021-05-17 (+10d) |  |  |  |  |  |

| ID | Task | Start | Finish | Duration | Total float | Other |
| --- | --- | --- | --- | --- | --- | --- |
| 112 | **需求第三次迭代** | 2021-05-08 → 2021-05-18 (+10d) | 2021-05-16 → 2021-05-26 (+10d) | 2d? → 5.5d? | 0d → none |  |
| 113 | **需求获取** | 2021-05-08 → 2021-05-18 (+10d) | 2021-05-08 → 2021-05-18 (+10d) |  |  |  |
| 114 | 用户访谈 | 2021-05-08 → 2021-05-18 (+10d) | 2021-05-08 → 2021-05-18 (+10d) |  | 0d → 0.25d | constraint none → start no earlier than 2021-05-18 |
| 115 | **需求分析** | 2021-05-09 → 2021-05-19 (+10d) | 2021-05-12 → 2021-05-22 (+10d) | 0.75d? → 4.25d? | 0d → none |  |
| 116 | G11小组例会 | 2021-05-09 → 2021-05-19 (+10d) | 2021-05-09 → 2021-05-19 (+10d) |  | 0.75d → 10.5d | constraint start no earlier than 2021-05-09 → start no earlier than 2021-05-19 |
| 117 | 更新需求建模 | 2021-05-09 → 2021-05-19 (+10d) | 2021-05-10 → 2021-05-20 (+10d) |  | 0d → 0.25d |  |
| 118 | 更新需求细化 | 2021-05-09 → 2021-05-19 (+10d) | 2021-05-09 → 2021-05-19 (+10d) |  | 0.25d → 0.5d |  |
| 119 | 原型更新 | 2021-05-09 → 2021-05-19 (+10d) | 2021-05-10 → 2021-05-20 (+10d) |  | 0.5d → 0.75d |  |
| 120 | 数据字典更新 | 2021-05-11 → 2021-05-21 (+10d) | 2021-05-12 → 2021-05-22 (+10d) |  | 0d → 0.25d |  |
| 121 | 子系统更新 | 2021-05-11 → 2021-05-21 (+10d) | 2021-05-11 → 2021-05-21 (+10d) |  | 0.25d → 0.5d |  |
| 122 | G11小组例会 | 2021-05-12 → 2021-05-21 (+9d) | 2021-05-12 → 2021-05-21 (+9d) |  | 1d → 10d |  |
| 123 | 更新需求规格说明书 | 2021-05-13 → 2021-05-23 (+10d) | 2021-05-13 → 2021-05-23 (+10d) |  |  |  |
| 124 | **需求验证** | 2021-05-13 → 2021-05-23 (+10d) | 2021-05-15 → 2021-05-25 (+10d) |  | 0d → 0.25d |  |
| 125 | 测试需求 | 2021-05-13 → 2021-05-23 (+10d) | 2021-05-14 → 2021-05-24 (+10d) |  | 0d → 0.25d |  |
| 126 | 原型修改 | 2021-05-13 → 2021-05-23 (+10d) | 2021-05-14 → 2021-05-24 (+10d) |  |  |  |
| 127 | 原型确认 | 2021-05-15 → 2021-05-25 (+10d) | 2021-05-15 → 2021-05-25 (+10d) |  |  |  |
| 128 | **需求管理** | 2021-05-15 → 2021-05-25 (+10d) | 2021-05-15 → 2021-05-25 (+10d) |  | 0d → 0.25d |  |
| 129 | 更新需求基线 | 2021-05-15 → 2021-05-25 (+10d) | 2021-05-15 → 2021-05-25 (+10d) |  | 0d → 0.25d |  |
| 130 | 更新需求跟踪信息 | 2021-05-15 → 2021-05-25 (+10d) | 2021-05-15 → 2021-05-25 (+10d) |  | 0d → 0.25d |  |
| 131 | 后向跟踪 | 2021-05-15 → 2021-05-25 (+10d) | 2021-05-15 → 2021-05-25 (+10d) |  | 0d → 0.25d |  |
| 132 | 前向跟踪 | 2021-05-15 → 2021-05-25 (+10d) | 2021-05-15 → 2021-05-25 (+10d) |  | 0d → 0.25d |  |
| 133 | 更新变更控制 | 2021-05-15 → 2021-05-25 (+10d) | 2021-05-15 → 2021-05-25 (+10d) |  | 0d → 0.25d |  |
| 134 | G11小组第十六次会议 | 2021-05-16 → 2021-05-26 (+10d) | 2021-05-16 → 2021-05-26 (+10d) |  | 0d → 8.75d |  |
| 135 | **需求第四次迭代** | 2021-05-17 → 2021-05-27 (+10d) | 2021-05-24 → 2021-06-03 (+10d) | 1.75d? → 5.25d? | 0d → none |  |
| 136 | **需求获取** | 2021-05-17 → 2021-05-27 (+10d) | 2021-05-17 → 2021-05-27 (+10d) |  |  |  |
| 137 | 用户访谈 | 2021-05-17 → 2021-05-27 (+10d) | 2021-05-17 → 2021-05-27 (+10d) |  |  |  |
| 138 | **需求分析** | 2021-05-18 → 2021-05-27 (+9d) | 2021-05-21 → 2021-05-31 (+10d) | 0.75d? → 1d? |  |  |
| 139 | 更新需求建模 | 2021-05-18 → 2021-05-28 (+10d) | 2021-05-19 → 2021-05-29 (+10d) |  |  |  |
| 140 | 更新需求细化 | 2021-05-18 → 2021-05-28 (+10d) | 2021-05-18 → 2021-05-28 (+10d) |  |  |  |
| 141 | 原型更新 | 2021-05-18 → 2021-05-28 (+10d) | 2021-05-19 → 2021-05-29 (+10d) |  |  |  |
| 142 | G11小组例会 | 2021-05-19 → 2021-05-27 (+8d) | 2021-05-19 → 2021-05-27 (+8d) |  | 0.5d → 1d |  |
| 143 | 数据字典更新 | 2021-05-20 → 2021-05-30 (+10d) | 2021-05-21 → 2021-05-31 (+10d) |  |  |  |
| 144 | 子系统更新 | 2021-05-20 → 2021-05-30 (+10d) | 2021-05-20 → 2021-05-30 (+10d) |  |  |  |
| 145 | 更新需求规格说明书 | 2021-05-22 → 2021-06-01 (+10d) | 2021-05-22 → 2021-06-01 (+10d) |  |  |  |
| 146 | **需求验证** | 2021-05-22 → 2021-06-01 (+10d) | 2021-05-24 → 2021-06-03 (+10d) |  |  |  |
| 147 | 测试需求 | 2021-05-22 → 2021-06-01 (+10d) | 2021-05-23 → 2021-06-02 (+10d) |  |  |  |
| 148 | 原型修改 | 2021-05-22 → 2021-06-01 (+10d) | 2021-05-23 → 2021-06-02 (+10d) |  |  |  |
| 149 | G11小组例会 | 2021-05-23 → 2021-06-02 (+10d) | 2021-05-23 → 2021-06-02 (+10d) |  |  |  |
| 150 | 原型确认 | 2021-05-24 → 2021-06-03 (+10d) | 2021-05-24 → 2021-06-03 (+10d) |  |  |  |
| 151 | **需求管理** | 2021-05-24 → 2021-06-03 (+10d) | 2021-05-24 → 2021-06-03 (+10d) |  |  |  |
| 152 | 更新需求基线 | 2021-05-24 → 2021-06-03 (+10d) | 2021-05-24 → 2021-06-03 (+10d) |  |  |  |
| 153 | 更新需求跟踪信息 | 2021-05-24 → 2021-06-03 (+10d) | 2021-05-24 → 2021-06-03 (+10d) |  |  |  |
| 154 | 后向跟踪 | 2021-05-24 → 2021-06-03 (+10d) | 2021-05-24 → 2021-06-03 (+10d) |  |  |  |
| 155 | 前向跟踪 | 2021-05-24 → 2021-06-03 (+10d) | 2021-05-24 → 2021-06-03 (+10d) |  |  |  |
| 156 | 更新变更控制 | 2021-05-24 → 2021-06-03 (+10d) | 2021-05-24 → 2021-06-03 (+10d) |  |  |  |
| 157 | **需求第五次迭代** | 2021-05-25 → 2021-06-04 (+10d) | 2021-06-01 → 2021-06-11 (+10d) | 1.75d? → 5.25d? | 0d → none |  |
| 158 | **需求获取** | 2021-05-25 → 2021-06-04 (+10d) | 2021-05-25 → 2021-06-04 (+10d) |  |  |  |
| 159 | 用户访谈 | 2021-05-25 → 2021-06-04 (+10d) | 2021-05-25 → 2021-06-04 (+10d) |  | 3.25d → 0.75d |  |
| 160 | **需求分析** | 2021-05-26 → 2021-06-05 (+10d) | 2021-05-29 → 2021-06-08 (+10d) |  | 3.25d → 0.75d |  |
| 161 | 更新需求建模 | 2021-05-26 → 2021-06-05 (+10d) | 2021-05-27 → 2021-06-06 (+10d) |  | 3.25d → 0.75d |  |
| 162 | 更新需求细化 | 2021-05-26 → 2021-06-05 (+10d) | 2021-05-26 → 2021-06-05 (+10d) |  | 3.5d → 1d |  |
| 163 | G11小组例会 | 2021-05-26 → 2021-06-05 (+10d) | 2021-05-26 → 2021-06-05 (+10d) |  | 4d → 1.5d |  |
| 164 | 原型更新 | 2021-05-26 → 2021-06-05 (+10d) | 2021-05-27 → 2021-06-06 (+10d) |  | 3.75d → 1.25d |  |
| 165 | 数据字典更新 | 2021-05-28 → 2021-06-07 (+10d) | 2021-05-29 → 2021-06-08 (+10d) |  | 3.25d → 0.75d |  |
| 166 | 子系统更新 | 2021-05-28 → 2021-06-07 (+10d) | 2021-05-28 → 2021-06-07 (+10d) |  | 3.5d → 1d |  |
| 167 | G11小组例会 | 2021-05-30 → 2021-06-09 (+10d) | 2021-05-30 → 2021-06-09 (+10d) |  | 3.75d → 1.25d |  |
| 168 | 更新需求规格说明书 | 2021-05-30 → 2021-06-09 (+10d) | 2021-05-30 → 2021-06-09 (+10d) |  | 3.75d → 1.25d |  |
| 169 | **需求验证** | 2021-05-30 → 2021-06-09 (+10d) | 2021-06-01 → 2021-06-11 (+10d) |  | 3.25d → 0.75d |  |
| 170 | 测试需求 | 2021-05-30 → 2021-06-09 (+10d) | 2021-05-31 → 2021-06-10 (+10d) |  | 3.25d → 0.75d |  |
| 171 | 原型修改 | 2021-05-30 → 2021-06-09 (+10d) | 2021-05-31 → 2021-06-10 (+10d) |  | 3.25d → 0.75d |  |
| 172 | 原型确认 | 2021-06-01 → 2021-06-11 (+10d) | 2021-06-01 → 2021-06-11 (+10d) |  | 3.25d → 0.75d |  |
| 173 | **需求管理** | 2021-06-01 → 2021-06-11 (+10d) | 2021-06-01 → 2021-06-11 (+10d) |  | 3.25d → 0.75d |  |
| 174 | 更新需求基线 | 2021-06-01 → 2021-06-11 (+10d) | 2021-06-01 → 2021-06-11 (+10d) |  | 3.25d → 0.75d |  |
| 175 | 跟新需求跟踪信息 | 2021-06-01 → 2021-06-11 (+10d) | 2021-06-01 → 2021-06-11 (+10d) |  | 3.25d → 0.75d |  |
| 176 | 后向跟踪 | 2021-06-01 → 2021-06-11 (+10d) | 2021-06-01 → 2021-06-11 (+10d) |  | 3.25d → 0.75d |  |
| 177 | 前向跟踪 | 2021-06-01 → 2021-06-11 (+10d) | 2021-06-01 → 2021-06-11 (+10d) |  | 3.25d → 0.75d |  |
| 178 | 更新变更控制 | 2021-06-01 → 2021-06-11 (+10d) | 2021-06-01 → 2021-06-11 (+10d) |  | 3.25d → 0.75d |  |
| 179 | **设计与开发阶段** | 2021-06-02 → 2021-06-12 (+10d) | 2021-06-10 → 2021-06-20 (+10d) |  | 3.25d → 0.75d |  |
| 180 | **需求变更（延期概要设计）** | 2021-06-02 → 2021-06-12 (+10d) | 2021-06-06 → 2021-06-16 (+10d) |  | 3.25d → 0.75d |  |
| 181 | 访谈确认变更点 | 2021-06-02 → 2021-06-12 (+10d) | 2021-06-02 → 2021-06-12 (+10d) |  | 3.25d → 0.75d |  |

| ID | Task | Start | Finish | Total float |
| --- | --- | --- | --- | --- |
| 182 | G11小组例会 | 2021-06-02 → 2021-06-12 (+10d) | 2021-06-02 → 2021-06-12 (+10d) | 4.25d → 1.75d |
| 183 | 导入需求至需求管理工具 | 2021-06-03 → 2021-06-13 (+10d) | 2021-06-03 → 2021-06-13 (+10d) | 3.25d → 0.75d |
| 184 | 需求影响分析报告 | 2021-06-03 → 2021-06-13 (+10d) | 2021-06-04 → 2021-06-14 (+10d) | 3.75d → 1.25d |
| 185 | 导入界面原型至需求管理工具 | 2021-06-03 → 2021-06-13 (+10d) | 2021-06-03 → 2021-06-13 (+10d) | 3.25d → 0.75d |
| 186 | 导入测试用例至需求管理工具 | 2021-06-03 → 2021-06-13 (+10d) | 2021-06-03 → 2021-06-13 (+10d) | 3.25d → 0.75d |
| 187 | 需求管理工具中评价工作量 | 2021-06-04 → 2021-06-14 (+10d) | 2021-06-04 → 2021-06-14 (+10d) | 3.25d → 0.75d |
| 188 | 访谈确认变更 | 2021-06-05 → 2021-06-15 (+10d) | 2021-06-05 → 2021-06-15 (+10d) | 3.25d → 0.75d |
| 189 | G11小组例会 | 2021-06-06 → 2021-06-16 (+10d) | 2021-06-06 → 2021-06-16 (+10d) | 3.25d → 0.75d |
| 190 | 修订文档 | 2021-06-06 → 2021-06-16 (+10d) | 2021-06-06 → 2021-06-16 (+10d) | 3.25d → 0.75d |
| 191 | **概要设计** | 2021-06-07 → 2021-06-17 (+10d) | 2021-06-09 → 2021-06-19 (+10d) | 3.25d → 0.75d |
| 192 | 设计数据库 | 2021-06-07 → 2021-06-17 (+10d) | 2021-06-07 → 2021-06-17 (+10d) | 3.25d → 0.75d |
| 193 | 体系结构设计 | 2021-06-07 → 2021-06-17 (+10d) | 2021-06-07 → 2021-06-17 (+10d) | 3.25d → 0.75d |
| 194 | 编写概要设计文档 | 2021-06-08 → 2021-06-18 (+10d) | 2021-06-09 → 2021-06-19 (+10d) | 5.25d → 2.75d |
| 195 | 编写测试计划 | 2021-06-08 → 2021-06-18 (+10d) | 2021-06-09 → 2021-06-19 (+10d) | 5.25d → 2.75d |
| 196 | **详细设计** | 2021-06-08 → 2021-06-18 (+10d) | 2021-06-09 → 2021-06-19 (+10d) | 3.25d → 0.75d |
| 197 | 编写接口文档 | 2021-06-08 → 2021-06-18 (+10d) | 2021-06-08 → 2021-06-18 (+10d) | 3.5d → 1d |
| 198 | 编写详细设计文档 | 2021-06-08 → 2021-06-18 (+10d) | 2021-06-09 → 2021-06-19 (+10d) | 3.25d → 0.75d |
| 199 | G11小组例会 | 2021-06-09 → 2021-06-12 (+3d) | 2021-06-09 → 2021-06-12 (+3d) | 5.25d → 4.5d |
| 200 | 整合设计文档 | 2021-06-10 → 2021-06-20 (+10d) | 2021-06-10 → 2021-06-20 (+10d) | 3.25d → 0.75d |
| 202 | 客户端编码 | 2021-06-15 → 2021-06-21 (+6d) | 2021-06-16 → 2021-06-22 (+6d) | 2.25d → 0.75d |
| 203 | 后端编码 | 2021-06-15 → 2021-06-21 (+6d) | 2021-06-16 → 2021-06-22 (+6d) | 2.25d → 0.75d |
| 204 | 管理员端编码 | 2021-06-15 → 2021-06-21 (+6d) | 2021-06-16 → 2021-06-22 (+6d) | 2.25d → 0.75d |
| 206 | 单元测试 | 2021-06-17 → 2021-06-23 (+6d) | 2021-06-18 → 2021-06-24 (+6d) | 2.25d → 0.75d |
| 207 | 集成测试 | 2021-06-19 → 2021-06-25 (+6d) | 2021-06-20 → 2021-06-26 (+6d) | 2.25d → 0.75d |

## Version 5 (saved 2021-04-04, file SRA2021-G11-项目计划v1.0.2.mpp)

Note of the change: Merge branch 'main' of https://github.com/SRayJay/SRA2021-G11 into main

Last finish stays 2021-06-30.

Changed:

| ID | Task | Start | Finish | Duration | Complete | Total float | Predecessors | Other |
| --- | --- | --- | --- | --- | --- | --- | --- | --- |
| 22 | 沟通管理计划 |  |  |  |  |  | 2 → none |  |
| 23 | 成本管理计划 |  |  |  |  |  | 2 → none |  |
| 24 | 资源管理计划 |  |  |  |  |  | 2 → none |  |
| 25 | 采购管理计划 |  |  |  |  |  | 2 → none |  |
| 26 | 范围管理计划 |  |  |  |  |  | 2 → none |  |
| 33 | **软件需求分析（延后）** |  |  |  | 5% → 4% |  |  |  |
| 34 | **需求第一次迭代** |  | 2021-05-07 → 2021-04-28 (-9d) | 10.5d? → 8.5d? |  | 13.62d → 15.62d |  |  |
| 35 | **需求获取** |  | 2021-04-13 → 2021-04-09 (-4d) | 4.5d? → 3.5d? |  | 1d → -0.5d |  |  |
| 38 | **选择信息的来源** |  | 2021-04-09 → 2021-04-02 (-7d) | 2.75d? → 1d? |  | 0.5d → -0.5d |  |  |
| 42 | 识别用户需求（延后） | 2021-04-08 → 2021-03-31 (-8d) | 2021-04-08 → 2021-04-01 (-7d) |  |  | 0.5d → -1.5d |  | constraint start no earlier than 2021-04-08 → start no earlier than 2021-03-30 |
| 43 | 识别系统事件和响应 | 2021-04-09 → 2021-04-01 (-8d) | 2021-04-09 → 2021-04-02 (-7d) |  |  | 0.5d → -1.5d |  | was named 识别系统事件和响应(延后) |
| 45 | **选择获取方法，执行获取** | 2021-04-09 → 2021-04-05 (-4d) | 2021-04-11 → 2021-04-07 (-4d) |  |  |  |  |  |
| 46 | 举行引导式需求获取讨论会 | 2021-04-09 → 2021-04-05 (-4d) | 2021-04-09 → 2021-04-05 (-4d) |  |  | 0.75d → -2d |  |  |
| 47 | 观察用户如何完成工作 | 2021-04-10 → 2021-04-06 (-4d) | 2021-04-10 → 2021-04-06 (-4d) |  |  | 0.75d → -2d |  |  |
| 48 | 分发调查问卷 | 2021-04-11 → 2021-04-07 (-4d) | 2021-04-11 → 2021-04-07 (-4d) |  |  | 0.75d → -2d |  |  |
| 49 | **记录获取结果** | 2021-04-12 → 2021-04-08 (-4d) | 2021-04-13 → 2021-04-09 (-4d) |  |  | 0.75d → -2d |  |  |
| 50 | 分析文档 | 2021-04-12 → 2021-04-08 (-4d) | 2021-04-12 → 2021-04-08 (-4d) |  |  | 0.75d → -2d |  |  |
| 51 | 检查问题报告 | 2021-04-13 → 2021-04-09 (-4d) | 2021-04-13 → 2021-04-09 (-4d) |  |  | 0.75d → -2d |  |  |
| 53 | **需求分析** | 2021-04-14 → 2021-04-10 (-4d) |  | 7d? → 8d? |  |  |  |  |
| 54 | 背景分析 | 2021-04-14 → 2021-04-10 (-4d) | 2021-04-14 → 2021-04-10 (-4d) |  |  | 0.75d → -2d |  |  |
| 55 | 确定系统边界 | 2021-04-15 → 2021-04-11 (-4d) | 2021-04-15 → 2021-04-11 (-4d) |  |  | 0.75d → -2d |  |  |
| 56 | G11小组例会 | 2021-04-15 → 2021-04-11 (-4d) | 2021-04-15 → 2021-04-11 (-4d) |  |  | 4.75d → 2.25d |  |  |
| 57 | 需求建模 | 2021-04-16 → 2021-04-12 (-4d) | 2021-04-18 → 2021-04-14 (-4d) |  |  | 0.75d → -2d |  |  |
| 59 | 需求细化 | 2021-04-19 → 2021-04-15 (-4d) | 2021-04-19 → 2021-04-15 (-4d) |  |  | 0.75d → -2d |  |  |
| 60 | 确定优先级 | 2021-04-20 → 2021-04-16 (-4d) | 2021-04-20 → 2021-04-16 (-4d) |  |  | 0.75d → -2d |  |  |
| 61 | 需求协商 | 2021-04-21 → 2021-04-17 (-4d) | 2021-04-22 → 2021-04-19 (-3d) | 2d → 3d |  | 0.75d → -2d |  |  |
| 63 | 数据字典创建 | 2021-04-23 → 2021-04-20 (-3d) | 2021-04-23 → 2021-04-20 (-3d) |  |  | 2.75d → 0d |  |  |
| 64 | 原型开发 | 2021-04-23 → 2021-04-20 (-3d) | 2021-04-28 → 2021-04-25 (-3d) |  |  | 0.75d → -2d |  |  |
| 65 | G11小组例会 |  |  |  |  |  |  | resources G11小组 → 黄文涛 |
| 66 | 原型确认 | 2021-04-28 → 2021-04-25 (-3d) | 2021-05-01 → 2021-04-28 (-3d) |  |  | 0.75d → -2d |  |  |
| 67 | 建立子系统 | 2021-04-23 → 2021-04-20 (-3d) | 2021-04-23 → 2021-04-20 (-3d) |  |  | 2.75d → 0d |  |  |
| 68 | **编写需求规格说明书** | 2021-04-29 → 2021-04-20 (-9d) | 2021-05-01 → 2021-04-21 (-10d) | 32h? → 4h? |  |  |  |  |
| 70 | 创建需求跟踪能力矩阵 | 2021-04-29 → 2021-04-21 (-8d) | 2021-04-29 → 2021-04-21 (-8d) |  |  | 1.5d → 0d |  |  |
| 71 | **需求验证** | 2021-05-05 → 2021-04-21 (-14d) | 2021-05-07 → 2021-04-23 (-14d) | 4d? → 0.5d? |  | none → 0.25d |  |  |
| 72 | 测试需求 | 2021-05-05 → 2021-04-21 (-14d) | 2021-05-05 → 2021-04-21 (-14d) |  |  |  |  |  |
| 73 | 编写测试用例 | 2021-05-05 → 2021-04-21 (-14d) | 2021-05-05 → 2021-04-21 (-14d) |  |  | 0.75d → 17.5d |  |  |
| 74 | 原型修改 | 2021-05-05 → 2021-04-21 (-14d) | 2021-05-05 → 2021-04-21 (-14d) |  |  | 0.25d → 17d |  |  |
| 75 | 原型确认 | 2021-05-06 → 2021-04-22 (-14d) | 2021-05-06 → 2021-04-22 (-14d) |  |  | 0.25d → 17d |  |  |
| 76 | 编写用户手册 | 2021-05-07 → 2021-04-23 (-14d) | 2021-05-07 → 2021-04-23 (-14d) |  |  | 0.25d → 17d |  |  |
| 77 | **需求管理** | 2021-04-23 → 2021-04-20 (-3d) | 2021-05-07 → 2021-04-23 (-14d) | 3.5d? → 0.75d? |  | 0.25d → 0.75d | 61 → 62 |  |
| 78 | **建立需求基线** | 2021-04-23 → 2021-04-20 (-3d) | 2021-05-06 → 2021-04-22 (-14d) | 3.25d? → 0.5d? |  |  | 61 → 62 |  |
| 79 | 更新需求优先级 | 2021-04-23 → 2021-04-20 (-3d) | 2021-04-23 → 2021-04-20 (-3d) |  |  | 3.5d → 0.75d |  |  |
| 80 | 工作量估算 | 2021-04-23 → 2021-04-20 (-3d) | 2021-04-23 → 2021-04-20 (-3d) |  |  | 3.5d → 0.75d |  |  |
| 81 | 未完成项合并 | 2021-05-06 → 2021-04-22 (-14d) | 2021-05-06 → 2021-04-22 (-14d) |  |  |  |  |  |
| 82 | 建立需求跟踪信息 | 2021-04-24 → 2021-04-21 (-3d) | 2021-04-24 → 2021-04-21 (-3d) |  |  | 3.5d → 1.75d |  |  |
| 83 | 后向跟踪 | 2021-05-06 → 2021-04-22 (-14d) | 2021-05-06 → 2021-04-22 (-14d) |  |  | 0.5d → 1.5d |  |  |
| 84 | 前向跟踪 | 2021-05-06 → 2021-04-22 (-14d) | 2021-05-06 → 2021-04-22 (-14d) |  |  | 0.5d → 1.5d |  |  |
| 85 | G11小组第十次会议 | 2021-05-07 → 2021-04-23 (-14d) | 2021-05-07 → 2021-04-23 (-14d) |  |  | 0.25d → 1.25d |  |  |
| 86 | **进行变更控制** | 2021-05-07 → 2021-04-23 (-14d) | 2021-05-07 → 2021-04-23 (-14d) |  |  |  |  |  |
| 87 | 业务影响分析 | 2021-05-07 → 2021-04-23 (-14d) | 2021-05-07 → 2021-04-23 (-14d) |  |  |  |  |  |
| 88 | 技术影响分析 | 2021-05-07 → 2021-04-23 (-14d) | 2021-05-07 → 2021-04-23 (-14d) |  |  |  |  |  |
| 89 | 项目影响分析 | 2021-05-07 → 2021-04-23 (-14d) | 2021-05-07 → 2021-04-23 (-14d) |  |  |  |  |  |
| 90 | **需求第二次迭代** | 2021-05-08 → 2021-04-25 (-13d) | 2021-05-17 → 2021-05-07 (-10d) | 5.75d? → 3d? |  | none → 0d | 34 → 86 |  |
| 91 | G11小组例会 | 2021-05-08 → 2021-04-25 (-13d) | 2021-05-08 → 2021-04-25 (-13d) |  |  | 13.25d → 3d |  | constraint start no earlier than 2021-05-08 → start no earlier than 2021-04-25 |
| 92 | **需求获取** | 2021-05-09 → 2021-04-25 (-14d) | 2021-05-09 → 2021-04-25 (-14d) |  |  |  |  |  |
| 93 | 用户访谈 | 2021-05-09 → 2021-04-25 (-14d) | 2021-05-09 → 2021-04-25 (-14d) |  |  | 0d → 1d |  |  |
| 94 | **需求分析** | 2021-05-10 → 2021-04-26 (-14d) | 2021-05-13 → 2021-04-29 (-14d) |  |  | 0d → 1d |  |  |
| 95 | 更新需求建模 | 2021-05-10 → 2021-04-26 (-14d) | 2021-05-10 → 2021-04-26 (-14d) |  |  | 1.25d → 2.25d |  |  |
| 96 | 更新需求细化 | 2021-05-10 → 2021-04-26 (-14d) | 2021-05-11 → 2021-04-27 (-14d) |  |  | 0d → 1d |  |  |
| 97 | 原型更新 | 2021-05-10 → 2021-04-26 (-14d) | 2021-05-11 → 2021-04-27 (-14d) |  |  | 0.5d → 1.5d |  |  |
| 98 | 数据字典更新 | 2021-05-12 → 2021-04-28 (-14d) | 2021-05-13 → 2021-04-29 (-14d) |  |  | 1d → 2d |  |  |
| 99 | 子系统更新 | 2021-05-12 → 2021-04-28 (-14d) | 2021-05-12 → 2021-04-28 (-14d) |  |  | 1.25d → 2.25d |  |  |
| 100 | G11小组例会 | 2021-05-12 → 2021-04-28 (-14d) | 2021-05-12 → 2021-04-28 (-14d) |  |  | 1.25d → 2.25d |  |  |
| 101 | 更新需求规格说明书 | 2021-05-12 → 2021-04-28 (-14d) | 2021-05-13 → 2021-04-29 (-14d) |  |  | 0d → 1d |  |  |
| 102 | **需求验证** | 2021-05-14 → 2021-05-05 (-9d) | 2021-05-16 → 2021-05-07 (-9d) |  |  |  |  |  |
| 103 | 测试需求 | 2021-05-14 → 2021-05-05 (-9d) | 2021-05-15 → 2021-05-06 (-9d) |  |  | 0.25d → 0d |  |  |
| 104 | 原型修改 | 2021-05-14 → 2021-05-05 (-9d) | 2021-05-15 → 2021-05-06 (-9d) |  |  | 0d → -0.25d |  |  |
| 105 | 原型确认 | 2021-05-16 → 2021-05-07 (-9d) | 2021-05-16 → 2021-05-07 (-9d) |  |  | 0d → -0.25d |  |  |
| 106 | **需求管理** | 2021-05-17 → 2021-05-07 (-10d) | 2021-05-17 → 2021-05-07 (-10d) |  |  |  |  |  |
| 107 | 更新需求基线 | 2021-05-17 → 2021-05-07 (-10d) | 2021-05-17 → 2021-05-07 (-10d) |  |  |  |  |  |

| ID | Task | Start | Finish | Duration | Total float | Other |
| --- | --- | --- | --- | --- | --- | --- |
| 108 | 更新需求跟踪信息 | 2021-05-17 → 2021-05-07 (-10d) | 2021-05-17 → 2021-05-07 (-10d) |  |  |  |
| 109 | 后向跟踪 | 2021-05-17 → 2021-05-07 (-10d) | 2021-05-17 → 2021-05-07 (-10d) |  |  |  |
| 110 | 前向跟踪 | 2021-05-17 → 2021-05-07 (-10d) | 2021-05-17 → 2021-05-07 (-10d) |  |  |  |
| 111 | 更新变更控制 | 2021-05-17 → 2021-05-07 (-10d) | 2021-05-17 → 2021-05-07 (-10d) |  |  |  |
| 112 | **需求第三次迭代** | 2021-05-18 → 2021-05-08 (-10d) | 2021-05-26 → 2021-05-16 (-10d) | 5.5d? → 2d? | none → 0d |  |
| 113 | **需求获取** | 2021-05-18 → 2021-05-08 (-10d) | 2021-05-18 → 2021-05-08 (-10d) |  |  |  |
| 114 | 用户访谈 | 2021-05-18 → 2021-05-08 (-10d) | 2021-05-18 → 2021-05-08 (-10d) |  | 0.25d → 0d | constraint start no earlier than 2021-05-18 → none |
| 115 | **需求分析** | 2021-05-19 → 2021-05-09 (-10d) | 2021-05-22 → 2021-05-12 (-10d) | 4.25d? → 0.75d? | none → 0d |  |
| 116 | G11小组例会 | 2021-05-19 → 2021-05-09 (-10d) | 2021-05-19 → 2021-05-09 (-10d) |  | 10.5d → 0.75d | constraint start no earlier than 2021-05-19 → start no earlier than 2021-05-09 |
| 117 | 更新需求建模 | 2021-05-19 → 2021-05-09 (-10d) | 2021-05-20 → 2021-05-10 (-10d) |  | 0.25d → 0d |  |
| 118 | 更新需求细化 | 2021-05-19 → 2021-05-09 (-10d) | 2021-05-19 → 2021-05-09 (-10d) |  | 0.5d → 0.25d |  |
| 119 | 原型更新 | 2021-05-19 → 2021-05-09 (-10d) | 2021-05-20 → 2021-05-10 (-10d) |  | 0.75d → 0.5d |  |
| 120 | 数据字典更新 | 2021-05-21 → 2021-05-11 (-10d) | 2021-05-22 → 2021-05-12 (-10d) |  | 0.25d → 0d |  |
| 121 | 子系统更新 | 2021-05-21 → 2021-05-11 (-10d) | 2021-05-21 → 2021-05-11 (-10d) |  | 0.5d → 0.25d |  |
| 122 | G11小组例会 | 2021-05-21 → 2021-05-12 (-9d) | 2021-05-21 → 2021-05-12 (-9d) |  | 10d → 1d |  |
| 123 | 更新需求规格说明书 | 2021-05-23 → 2021-05-13 (-10d) | 2021-05-23 → 2021-05-13 (-10d) |  |  |  |
| 124 | **需求验证** | 2021-05-23 → 2021-05-13 (-10d) | 2021-05-25 → 2021-05-15 (-10d) |  | 0.25d → 0d |  |
| 125 | 测试需求 | 2021-05-23 → 2021-05-13 (-10d) | 2021-05-24 → 2021-05-14 (-10d) |  | 0.25d → 0d |  |
| 126 | 原型修改 | 2021-05-23 → 2021-05-13 (-10d) | 2021-05-24 → 2021-05-14 (-10d) |  |  |  |
| 127 | 原型确认 | 2021-05-25 → 2021-05-15 (-10d) | 2021-05-25 → 2021-05-15 (-10d) |  |  |  |
| 128 | **需求管理** | 2021-05-25 → 2021-05-15 (-10d) | 2021-05-25 → 2021-05-15 (-10d) |  | 0.25d → 0d |  |
| 129 | 更新需求基线 | 2021-05-25 → 2021-05-15 (-10d) | 2021-05-25 → 2021-05-15 (-10d) |  | 0.25d → 0d |  |
| 130 | 更新需求跟踪信息 | 2021-05-25 → 2021-05-15 (-10d) | 2021-05-25 → 2021-05-15 (-10d) |  | 0.25d → 0d |  |
| 131 | 后向跟踪 | 2021-05-25 → 2021-05-15 (-10d) | 2021-05-25 → 2021-05-15 (-10d) |  | 0.25d → 0d |  |
| 132 | 前向跟踪 | 2021-05-25 → 2021-05-15 (-10d) | 2021-05-25 → 2021-05-15 (-10d) |  | 0.25d → 0d |  |
| 133 | 更新变更控制 | 2021-05-25 → 2021-05-15 (-10d) | 2021-05-25 → 2021-05-15 (-10d) |  | 0.25d → 0d |  |
| 134 | G11小组第十六次会议 | 2021-05-26 → 2021-05-16 (-10d) | 2021-05-26 → 2021-05-16 (-10d) |  | 8.75d → 0d |  |
| 135 | **需求第四次迭代** | 2021-05-27 → 2021-05-17 (-10d) | 2021-06-03 → 2021-05-24 (-10d) | 5.25d? → 1.75d? | none → 0d |  |
| 136 | **需求获取** | 2021-05-27 → 2021-05-17 (-10d) | 2021-05-27 → 2021-05-17 (-10d) |  |  |  |
| 137 | 用户访谈 | 2021-05-27 → 2021-05-17 (-10d) | 2021-05-27 → 2021-05-17 (-10d) |  |  |  |
| 138 | **需求分析** | 2021-05-27 → 2021-05-18 (-9d) | 2021-05-31 → 2021-05-21 (-10d) | 1d? → 0.75d? |  |  |
| 139 | 更新需求建模 | 2021-05-28 → 2021-05-18 (-10d) | 2021-05-29 → 2021-05-19 (-10d) |  |  |  |
| 140 | 更新需求细化 | 2021-05-28 → 2021-05-18 (-10d) | 2021-05-28 → 2021-05-18 (-10d) |  |  |  |
| 141 | 原型更新 | 2021-05-28 → 2021-05-18 (-10d) | 2021-05-29 → 2021-05-19 (-10d) |  |  |  |
| 142 | G11小组例会 | 2021-05-27 → 2021-05-19 (-8d) | 2021-05-27 → 2021-05-19 (-8d) |  | 1d → 0.5d |  |
| 143 | 数据字典更新 | 2021-05-30 → 2021-05-20 (-10d) | 2021-05-31 → 2021-05-21 (-10d) |  |  |  |
| 144 | 子系统更新 | 2021-05-30 → 2021-05-20 (-10d) | 2021-05-30 → 2021-05-20 (-10d) |  |  |  |
| 145 | 更新需求规格说明书 | 2021-06-01 → 2021-05-22 (-10d) | 2021-06-01 → 2021-05-22 (-10d) |  |  |  |
| 146 | **需求验证** | 2021-06-01 → 2021-05-22 (-10d) | 2021-06-03 → 2021-05-24 (-10d) |  |  |  |
| 147 | 测试需求 | 2021-06-01 → 2021-05-22 (-10d) | 2021-06-02 → 2021-05-23 (-10d) |  |  |  |
| 148 | 原型修改 | 2021-06-01 → 2021-05-22 (-10d) | 2021-06-02 → 2021-05-23 (-10d) |  |  |  |
| 149 | G11小组例会 | 2021-06-02 → 2021-05-23 (-10d) | 2021-06-02 → 2021-05-23 (-10d) |  |  |  |
| 150 | 原型确认 | 2021-06-03 → 2021-05-24 (-10d) | 2021-06-03 → 2021-05-24 (-10d) |  |  |  |
| 151 | **需求管理** | 2021-06-03 → 2021-05-24 (-10d) | 2021-06-03 → 2021-05-24 (-10d) |  |  |  |
| 152 | 更新需求基线 | 2021-06-03 → 2021-05-24 (-10d) | 2021-06-03 → 2021-05-24 (-10d) |  |  |  |
| 153 | 更新需求跟踪信息 | 2021-06-03 → 2021-05-24 (-10d) | 2021-06-03 → 2021-05-24 (-10d) |  |  |  |
| 154 | 后向跟踪 | 2021-06-03 → 2021-05-24 (-10d) | 2021-06-03 → 2021-05-24 (-10d) |  |  |  |
| 155 | 前向跟踪 | 2021-06-03 → 2021-05-24 (-10d) | 2021-06-03 → 2021-05-24 (-10d) |  |  |  |
| 156 | 更新变更控制 | 2021-06-03 → 2021-05-24 (-10d) | 2021-06-03 → 2021-05-24 (-10d) |  |  |  |
| 157 | **需求第五次迭代** | 2021-06-04 → 2021-05-25 (-10d) | 2021-06-11 → 2021-06-01 (-10d) | 5.25d? → 1.75d? | none → 0d |  |
| 158 | **需求获取** | 2021-06-04 → 2021-05-25 (-10d) | 2021-06-04 → 2021-05-25 (-10d) |  |  |  |
| 159 | 用户访谈 | 2021-06-04 → 2021-05-25 (-10d) | 2021-06-04 → 2021-05-25 (-10d) |  | 0.75d → 3.25d |  |
| 160 | **需求分析** | 2021-06-05 → 2021-05-26 (-10d) | 2021-06-08 → 2021-05-29 (-10d) |  | 0.75d → 3.25d |  |
| 161 | 更新需求建模 | 2021-06-05 → 2021-05-26 (-10d) | 2021-06-06 → 2021-05-27 (-10d) |  | 0.75d → 3.25d |  |
| 162 | 更新需求细化 | 2021-06-05 → 2021-05-26 (-10d) | 2021-06-05 → 2021-05-26 (-10d) |  | 1d → 3.5d |  |
| 163 | G11小组例会 | 2021-06-05 → 2021-05-26 (-10d) | 2021-06-05 → 2021-05-26 (-10d) |  | 1.5d → 4d |  |
| 164 | 原型更新 | 2021-06-05 → 2021-05-26 (-10d) | 2021-06-06 → 2021-05-27 (-10d) |  | 1.25d → 3.75d |  |
| 165 | 数据字典更新 | 2021-06-07 → 2021-05-28 (-10d) | 2021-06-08 → 2021-05-29 (-10d) |  | 0.75d → 3.25d |  |
| 166 | 子系统更新 | 2021-06-07 → 2021-05-28 (-10d) | 2021-06-07 → 2021-05-28 (-10d) |  | 1d → 3.5d |  |
| 167 | G11小组例会 | 2021-06-09 → 2021-05-30 (-10d) | 2021-06-09 → 2021-05-30 (-10d) |  | 1.25d → 3.75d |  |
| 168 | 更新需求规格说明书 | 2021-06-09 → 2021-05-30 (-10d) | 2021-06-09 → 2021-05-30 (-10d) |  | 1.25d → 3.75d |  |
| 169 | **需求验证** | 2021-06-09 → 2021-05-30 (-10d) | 2021-06-11 → 2021-06-01 (-10d) |  | 0.75d → 3.25d |  |
| 170 | 测试需求 | 2021-06-09 → 2021-05-30 (-10d) | 2021-06-10 → 2021-05-31 (-10d) |  | 0.75d → 3.25d |  |
| 171 | 原型修改 | 2021-06-09 → 2021-05-30 (-10d) | 2021-06-10 → 2021-05-31 (-10d) |  | 0.75d → 3.25d |  |
| 172 | 原型确认 | 2021-06-11 → 2021-06-01 (-10d) | 2021-06-11 → 2021-06-01 (-10d) |  | 0.75d → 3.25d |  |
| 173 | **需求管理** | 2021-06-11 → 2021-06-01 (-10d) | 2021-06-11 → 2021-06-01 (-10d) |  | 0.75d → 3.25d |  |
| 174 | 更新需求基线 | 2021-06-11 → 2021-06-01 (-10d) | 2021-06-11 → 2021-06-01 (-10d) |  | 0.75d → 3.25d |  |
| 175 | 跟新需求跟踪信息 | 2021-06-11 → 2021-06-01 (-10d) | 2021-06-11 → 2021-06-01 (-10d) |  | 0.75d → 3.25d |  |
| 176 | 后向跟踪 | 2021-06-11 → 2021-06-01 (-10d) | 2021-06-11 → 2021-06-01 (-10d) |  | 0.75d → 3.25d |  |
| 177 | 前向跟踪 | 2021-06-11 → 2021-06-01 (-10d) | 2021-06-11 → 2021-06-01 (-10d) |  | 0.75d → 3.25d |  |

| ID | Task | Start | Finish | Total float |
| --- | --- | --- | --- | --- |
| 178 | 更新变更控制 | 2021-06-11 → 2021-06-01 (-10d) | 2021-06-11 → 2021-06-01 (-10d) | 0.75d → 3.25d |
| 179 | **设计与开发阶段** | 2021-06-12 → 2021-06-02 (-10d) | 2021-06-20 → 2021-06-10 (-10d) | 0.75d → 3.25d |
| 180 | **需求变更（延期概要设计）** | 2021-06-12 → 2021-06-02 (-10d) | 2021-06-16 → 2021-06-06 (-10d) | 0.75d → 3.25d |
| 181 | 访谈确认变更点 | 2021-06-12 → 2021-06-02 (-10d) | 2021-06-12 → 2021-06-02 (-10d) | 0.75d → 3.25d |
| 182 | G11小组例会 | 2021-06-12 → 2021-06-02 (-10d) | 2021-06-12 → 2021-06-02 (-10d) | 1.75d → 4.25d |
| 183 | 导入需求至需求管理工具 | 2021-06-13 → 2021-06-03 (-10d) | 2021-06-13 → 2021-06-03 (-10d) | 0.75d → 3.25d |
| 184 | 需求影响分析报告 | 2021-06-13 → 2021-06-03 (-10d) | 2021-06-14 → 2021-06-04 (-10d) | 1.25d → 3.75d |
| 185 | 导入界面原型至需求管理工具 | 2021-06-13 → 2021-06-03 (-10d) | 2021-06-13 → 2021-06-03 (-10d) | 0.75d → 3.25d |
| 186 | 导入测试用例至需求管理工具 | 2021-06-13 → 2021-06-03 (-10d) | 2021-06-13 → 2021-06-03 (-10d) | 0.75d → 3.25d |
| 187 | 需求管理工具中评价工作量 | 2021-06-14 → 2021-06-04 (-10d) | 2021-06-14 → 2021-06-04 (-10d) | 0.75d → 3.25d |
| 188 | 访谈确认变更 | 2021-06-15 → 2021-06-05 (-10d) | 2021-06-15 → 2021-06-05 (-10d) | 0.75d → 3.25d |
| 189 | G11小组例会 | 2021-06-16 → 2021-06-06 (-10d) | 2021-06-16 → 2021-06-06 (-10d) | 0.75d → 3.25d |
| 190 | 修订文档 | 2021-06-16 → 2021-06-06 (-10d) | 2021-06-16 → 2021-06-06 (-10d) | 0.75d → 3.25d |
| 191 | **概要设计** | 2021-06-17 → 2021-06-07 (-10d) | 2021-06-19 → 2021-06-09 (-10d) | 0.75d → 3.25d |
| 192 | 设计数据库 | 2021-06-17 → 2021-06-07 (-10d) | 2021-06-17 → 2021-06-07 (-10d) | 0.75d → 3.25d |
| 193 | 体系结构设计 | 2021-06-17 → 2021-06-07 (-10d) | 2021-06-17 → 2021-06-07 (-10d) | 0.75d → 3.25d |
| 194 | 编写概要设计文档 | 2021-06-18 → 2021-06-08 (-10d) | 2021-06-19 → 2021-06-09 (-10d) | 2.75d → 5.25d |
| 195 | 编写测试计划 | 2021-06-18 → 2021-06-08 (-10d) | 2021-06-19 → 2021-06-09 (-10d) | 2.75d → 5.25d |
| 196 | **详细设计** | 2021-06-18 → 2021-06-08 (-10d) | 2021-06-19 → 2021-06-09 (-10d) | 0.75d → 3.25d |
| 197 | 编写接口文档 | 2021-06-18 → 2021-06-08 (-10d) | 2021-06-18 → 2021-06-08 (-10d) | 1d → 3.5d |
| 198 | 编写详细设计文档 | 2021-06-18 → 2021-06-08 (-10d) | 2021-06-19 → 2021-06-09 (-10d) | 0.75d → 3.25d |
| 199 | G11小组例会 | 2021-06-12 → 2021-06-09 (-3d) | 2021-06-12 → 2021-06-09 (-3d) | 4.5d → 5.25d |
| 200 | 整合设计文档 | 2021-06-20 → 2021-06-10 (-10d) | 2021-06-20 → 2021-06-10 (-10d) | 0.75d → 3.25d |
| 202 | 客户端编码 | 2021-06-21 → 2021-06-15 (-6d) | 2021-06-22 → 2021-06-16 (-6d) | 0.75d → 2.25d |
| 203 | 后端编码 | 2021-06-21 → 2021-06-15 (-6d) | 2021-06-22 → 2021-06-16 (-6d) | 0.75d → 2.25d |
| 204 | 管理员端编码 | 2021-06-21 → 2021-06-15 (-6d) | 2021-06-22 → 2021-06-16 (-6d) | 0.75d → 2.25d |
| 206 | 单元测试 | 2021-06-23 → 2021-06-17 (-6d) | 2021-06-24 → 2021-06-18 (-6d) | 0.75d → 2.25d |
| 207 | 集成测试 | 2021-06-25 → 2021-06-19 (-6d) | 2021-06-26 → 2021-06-20 (-6d) | 0.75d → 2.25d |

## Version 6 (saved 2021-04-04, file SRA2021-G11-项目计划v1.0.1.mpp)

Note of the change: Merge branch 'main' of https://github.com/SRayJay/SRA2021-G11 into main

Last finish stays 2021-06-30.

Changed:

| ID | Task | Other |
| --- | --- | --- |
| 39 | 识别用户群 | resources 伊君琛 → 黄文涛 |
| 40 | 确定用户代表 | resources 伊君琛 → 黄文涛 |
| 42 | 识别用户需求 | was named 识别用户需求（延后） |
| 43 | 识别系统事件和响应 | resources 伊君琛 → 黄文涛 |
| 55 | 确定系统边界 | resources 伊君琛 → 黄文涛 |
| 182 | G11小组第二十一次会议 | was named G11小组例会 |

## Version 7 (saved 2021-04-08, file SRA2021-G11-项目计划v1.0.4.mpp)

Note of the change: Create SRA2021-G11-项目计划v1.0.4.mpp

Last finish stays 2021-06-30.

Changed:

| ID | Task | Start | Finish | Duration | Complete | Total float | Predecessors | Other |
| --- | --- | --- | --- | --- | --- | --- | --- | --- |
| 23 | 沟通管理计划 |  |  |  |  |  | none → 2 |  |
| 24 | 成本管理计划 |  |  |  |  |  | none → 2 |  |
| 25 | 资源管理计划 |  |  |  |  |  | none → 2 |  |
| 26 | 采购管理计划 |  |  |  |  |  | none → 2 |  |
| 27 | 范围管理计划 |  |  |  |  |  | none → 2 |  |
| 33 | **软件需求分析（延后）** |  |  |  | 4% → 5% |  |  |  |
| 34 | **需求第一次迭代** |  | 2021-04-28 → 2021-05-07 (+9d) | 8.5d? → 10.75d? |  | 15.62d → 13.38d |  |  |
| 35 | **需求获取** |  | 2021-04-09 → 2021-04-19 (+10d) | 3.5d? → 6d? |  |  |  |  |
| 38 | **选择信息的来源** |  | 2021-04-02 → 2021-04-14 (+12d) | 1d? → 4d? |  | -0.5d → -0.75d |  |  |
| 39 | 识别用户群 |  |  |  |  |  |  | resources 黄文涛 → 伊君琛 |
| 40 | 确定用户代表 |  |  |  |  |  |  | resources 黄文涛 → 伊君琛 |
| 42 | 识别用户需求（延后） | 2021-03-31 → 2021-04-13 (+13d) | 2021-04-01 → 2021-04-13 (+12d) |  |  | -1.5d → -0.75d |  | was named 识别用户需求; constraint start no earlier than 2021-03-30 → start no earlier than 2021-04-13 |
| 43 | 识别系统事件和响应(延后) | 2021-04-01 → 2021-04-14 (+13d) | 2021-04-02 → 2021-04-14 (+12d) |  |  | -1.5d → -0.75d |  | was named 识别系统事件和响应; resources 黄文涛 → 伊君琛 |
| 45 | **选择获取方法，执行获取** | 2021-04-05 → 2021-04-15 (+10d) | 2021-04-07 → 2021-04-17 (+10d) |  |  |  |  |  |
| 46 | 举行引导式需求获取讨论会 | 2021-04-05 → 2021-04-15 (+10d) | 2021-04-05 → 2021-04-15 (+10d) |  |  | -2d → -0.75d |  |  |
| 47 | 观察用户如何完成工作 | 2021-04-06 → 2021-04-16 (+10d) | 2021-04-06 → 2021-04-16 (+10d) |  |  | -2d → -0.75d |  |  |
| 48 | 分发调查问卷 | 2021-04-07 → 2021-04-17 (+10d) | 2021-04-07 → 2021-04-17 (+10d) |  |  | -2d → -0.75d |  |  |
| 49 | **记录获取结果** | 2021-04-08 → 2021-04-18 (+10d) | 2021-04-09 → 2021-04-19 (+10d) |  |  | -2d → -0.75d |  |  |
| 50 | 分析文档 | 2021-04-08 → 2021-04-18 (+10d) | 2021-04-08 → 2021-04-18 (+10d) |  |  | -2d → -0.75d |  |  |
| 51 | 检查问题报告 | 2021-04-09 → 2021-04-19 (+10d) | 2021-04-09 → 2021-04-19 (+10d) |  |  | -2d → -0.75d |  |  |
| 53 | **需求分析** | 2021-04-10 → 2021-04-19 (+9d) | 2021-04-28 → 2021-04-29 (+1d) | 8d? → 6d? |  |  |  |  |
| 54 | 背景分析 | 2021-04-10 → 2021-04-20 (+10d) | 2021-04-10 → 2021-04-20 (+10d) |  |  | -2d → -0.75d |  |  |
| 55 | 确定系统边界 | 2021-04-11 → 2021-04-21 (+10d) | 2021-04-11 → 2021-04-21 (+10d) |  |  | -2d → -0.75d |  | resources 黄文涛 → 伊君琛 |
| 56 | G11小组例会 | 2021-04-11 → 2021-04-21 (+10d) | 2021-04-11 → 2021-04-21 (+10d) |  |  | 2.25d → 3.25d |  |  |
| 57 | 需求建模 | 2021-04-12 → 2021-04-22 (+10d) | 2021-04-14 → 2021-04-24 (+10d) |  |  | -2d → -0.75d |  |  |
| 59 | 需求细化 | 2021-04-15 → 2021-04-25 (+10d) | 2021-04-15 → 2021-04-25 (+10d) |  |  | -2d → -0.75d |  |  |
| 60 | 确定优先级 | 2021-04-16 → 2021-04-26 (+10d) | 2021-04-16 → 2021-04-26 (+10d) |  |  | -2d → -0.75d |  |  |
| 61 | 需求协商 | 2021-04-17 → 2021-04-27 (+10d) | 2021-04-19 → 2021-04-28 (+9d) | 3d → 2d |  | -2d → -0.75d |  |  |
| 63 | 数据字典创建 | 2021-04-20 → 2021-04-29 (+9d) | 2021-04-20 → 2021-04-29 (+9d) |  |  | 0d → 1.25d |  |  |
| 65 | 原型开发 | 2021-04-20 → 2021-04-29 (+9d) | 2021-04-25 → 2021-05-04 (+9d) |  |  | -2d → -0.75d |  |  |
| 66 | G11小组例会 |  |  |  |  |  |  | resources 黄文涛 → G11小组 |
| 67 | 原型确认 | 2021-04-25 → 2021-05-04 (+9d) | 2021-04-28 → 2021-05-07 (+9d) |  |  | -2d → -0.75d |  |  |
| 68 | 建立子系统 | 2021-04-20 → 2021-04-29 (+9d) | 2021-04-20 → 2021-04-29 (+9d) |  |  | 0d → 1.25d |  |  |
| 69 | **编写需求规格说明书** | 2021-04-20 → 2021-04-29 (+9d) | 2021-04-21 → 2021-05-01 (+10d) | 4h? → 32h? |  |  |  |  |
| 70 | 创建需求跟踪能力矩阵 | 2021-04-21 → 2021-04-29 (+8d) | 2021-04-21 → 2021-04-29 (+8d) |  |  | 0d → 1.5d |  |  |
| 71 | **需求验证** | 2021-04-21 → 2021-05-05 (+14d) | 2021-04-23 → 2021-05-07 (+14d) | 0.5d? → 4d? |  | 0.25d → none |  |  |
| 72 | 测试需求 | 2021-04-21 → 2021-05-05 (+14d) | 2021-04-21 → 2021-05-05 (+14d) |  |  |  |  |  |
| 73 | 编写测试用例 | 2021-04-21 → 2021-05-05 (+14d) | 2021-04-21 → 2021-05-05 (+14d) |  |  | 17.5d → 0.75d |  |  |
| 74 | 原型修改 | 2021-04-21 → 2021-05-05 (+14d) | 2021-04-21 → 2021-05-05 (+14d) |  |  | 17d → 0.25d |  |  |
| 75 | 原型确认 | 2021-04-22 → 2021-05-06 (+14d) | 2021-04-22 → 2021-05-06 (+14d) |  |  | 17d → 0.25d |  |  |
| 76 | 编写用户手册 | 2021-04-23 → 2021-05-07 (+14d) | 2021-04-23 → 2021-05-07 (+14d) |  |  | 17d → 0.25d |  |  |
| 77 | **需求管理** | 2021-04-20 → 2021-04-29 (+9d) | 2021-04-23 → 2021-05-07 (+14d) | 0.75d? → 2d? |  | 0.75d → 0.25d | 62 → 61 |  |
| 78 | **建立需求基线** | 2021-04-20 → 2021-04-29 (+9d) | 2021-04-22 → 2021-05-06 (+14d) | 0.5d? → 1.75d? |  |  | 62 → 61 |  |
| 79 | 更新需求优先级 | 2021-04-20 → 2021-04-29 (+9d) | 2021-04-20 → 2021-04-29 (+9d) |  |  | 0.75d → 2d |  |  |
| 80 | 工作量估算 | 2021-04-20 → 2021-04-29 (+9d) | 2021-04-20 → 2021-04-29 (+9d) |  |  | 0.75d → 2d |  |  |
| 81 | 未完成项合并 | 2021-04-22 → 2021-05-06 (+14d) | 2021-04-22 → 2021-05-06 (+14d) |  |  |  |  |  |
| 82 | 建立需求跟踪信息 | 2021-04-21 → 2021-04-30 (+9d) | 2021-04-21 → 2021-04-30 (+9d) |  |  | 1.75d → 2d |  |  |
| 83 | 后向跟踪 | 2021-04-22 → 2021-05-06 (+14d) | 2021-04-22 → 2021-05-06 (+14d) |  |  | 1.5d → 0.5d |  |  |
| 84 | 前向跟踪 | 2021-04-22 → 2021-05-06 (+14d) | 2021-04-22 → 2021-05-06 (+14d) |  |  | 1.5d → 0.5d |  |  |
| 85 | G11小组第十次会议 | 2021-04-23 → 2021-05-07 (+14d) | 2021-04-23 → 2021-05-07 (+14d) |  |  | 1.25d → 0.25d |  |  |
| 86 | **进行变更控制** | 2021-04-23 → 2021-05-07 (+14d) | 2021-04-23 → 2021-05-07 (+14d) |  |  |  |  |  |
| 87 | 业务影响分析 | 2021-04-23 → 2021-05-07 (+14d) | 2021-04-23 → 2021-05-07 (+14d) |  |  |  |  |  |
| 88 | 技术影响分析 | 2021-04-23 → 2021-05-07 (+14d) | 2021-04-23 → 2021-05-07 (+14d) |  |  |  |  |  |
| 89 | 项目影响分析 | 2021-04-23 → 2021-05-07 (+14d) | 2021-04-23 → 2021-05-07 (+14d) |  |  |  |  |  |
| 90 | **需求第二次迭代** | 2021-04-25 → 2021-05-08 (+13d) | 2021-05-07 → 2021-05-17 (+10d) | 3d? → 5.75d? |  | 0d → none | 86 → 34 |  |
| 91 | G11小组例会 | 2021-04-25 → 2021-05-08 (+13d) | 2021-04-25 → 2021-05-08 (+13d) |  |  | 3d → 13.25d |  | constraint start no earlier than 2021-04-25 → start no earlier than 2021-05-08 |
| 92 | **需求获取** | 2021-04-25 → 2021-05-09 (+14d) | 2021-04-25 → 2021-05-09 (+14d) |  |  |  |  |  |
| 93 | 用户访谈 | 2021-04-25 → 2021-05-09 (+14d) | 2021-04-25 → 2021-05-09 (+14d) |  |  | 1d → 0d |  |  |
| 94 | **需求分析** | 2021-04-26 → 2021-05-10 (+14d) | 2021-04-29 → 2021-05-13 (+14d) |  |  | 1d → 0d |  |  |
| 95 | 更新需求建模 | 2021-04-26 → 2021-05-10 (+14d) | 2021-04-26 → 2021-05-10 (+14d) |  |  | 2.25d → 1.25d |  |  |
| 96 | 更新需求细化 | 2021-04-26 → 2021-05-10 (+14d) | 2021-04-27 → 2021-05-11 (+14d) |  |  | 1d → 0d |  |  |
| 97 | 原型更新 | 2021-04-26 → 2021-05-10 (+14d) | 2021-04-27 → 2021-05-11 (+14d) |  |  | 1.5d → 0.5d |  |  |
| 98 | 数据字典更新 | 2021-04-28 → 2021-05-12 (+14d) | 2021-04-29 → 2021-05-13 (+14d) |  |  | 2d → 1d |  |  |
| 99 | 子系统更新 | 2021-04-28 → 2021-05-12 (+14d) | 2021-04-28 → 2021-05-12 (+14d) |  |  | 2.25d → 1.25d |  |  |
| 100 | G11小组例会 | 2021-04-28 → 2021-05-12 (+14d) | 2021-04-28 → 2021-05-12 (+14d) |  |  | 2.25d → 1.25d |  |  |
| 101 | 更新需求规格说明书 | 2021-04-28 → 2021-05-12 (+14d) | 2021-04-29 → 2021-05-13 (+14d) |  |  | 1d → 0d |  |  |
| 102 | **需求验证** | 2021-05-05 → 2021-05-14 (+9d) | 2021-05-07 → 2021-05-16 (+9d) |  |  |  |  |  |
| 103 | 测试需求 | 2021-05-05 → 2021-05-14 (+9d) | 2021-05-06 → 2021-05-15 (+9d) |  |  | 0d → 0.25d |  |  |
| 104 | 原型修改 | 2021-05-05 → 2021-05-14 (+9d) | 2021-05-06 → 2021-05-15 (+9d) |  |  | -0.25d → 0d |  |  |
| 105 | 原型确认 | 2021-05-07 → 2021-05-16 (+9d) | 2021-05-07 → 2021-05-16 (+9d) |  |  | -0.25d → 0d |  |  |

| ID | Task | Start | Finish | Duration | Total float | Other |
| --- | --- | --- | --- | --- | --- | --- |
| 106 | **需求管理** | 2021-05-07 → 2021-05-17 (+10d) | 2021-05-07 → 2021-05-17 (+10d) |  |  |  |
| 107 | 更新需求基线 | 2021-05-07 → 2021-05-17 (+10d) | 2021-05-07 → 2021-05-17 (+10d) |  |  |  |
| 108 | 更新需求跟踪信息 | 2021-05-07 → 2021-05-17 (+10d) | 2021-05-07 → 2021-05-17 (+10d) |  |  |  |
| 109 | 后向跟踪 | 2021-05-07 → 2021-05-17 (+10d) | 2021-05-07 → 2021-05-17 (+10d) |  |  |  |
| 110 | 前向跟踪 | 2021-05-07 → 2021-05-17 (+10d) | 2021-05-07 → 2021-05-17 (+10d) |  |  |  |
| 111 | 更新变更控制 | 2021-05-07 → 2021-05-17 (+10d) | 2021-05-07 → 2021-05-17 (+10d) |  |  |  |
| 112 | **需求第三次迭代** | 2021-05-08 → 2021-05-18 (+10d) | 2021-05-16 → 2021-05-26 (+10d) | 2d? → 5.5d? | 0d → none |  |
| 113 | **需求获取** | 2021-05-08 → 2021-05-18 (+10d) | 2021-05-08 → 2021-05-18 (+10d) |  |  |  |
| 114 | 用户访谈 | 2021-05-08 → 2021-05-18 (+10d) | 2021-05-08 → 2021-05-18 (+10d) |  | 0d → 0.25d | constraint none → start no earlier than 2021-05-18 |
| 115 | **需求分析** | 2021-05-09 → 2021-05-19 (+10d) | 2021-05-12 → 2021-05-22 (+10d) | 0.75d? → 4.25d? | 0d → none |  |
| 116 | G11小组例会 | 2021-05-09 → 2021-05-19 (+10d) | 2021-05-09 → 2021-05-19 (+10d) |  | 0.75d → 10.5d | constraint start no earlier than 2021-05-09 → start no earlier than 2021-05-19 |
| 117 | 更新需求建模 | 2021-05-09 → 2021-05-19 (+10d) | 2021-05-10 → 2021-05-20 (+10d) |  | 0d → 0.25d |  |
| 118 | 更新需求细化 | 2021-05-09 → 2021-05-19 (+10d) | 2021-05-09 → 2021-05-19 (+10d) |  | 0.25d → 0.5d |  |
| 119 | 原型更新 | 2021-05-09 → 2021-05-19 (+10d) | 2021-05-10 → 2021-05-20 (+10d) |  | 0.5d → 0.75d |  |
| 120 | 数据字典更新 | 2021-05-11 → 2021-05-21 (+10d) | 2021-05-12 → 2021-05-22 (+10d) |  | 0d → 0.25d |  |
| 121 | 子系统更新 | 2021-05-11 → 2021-05-21 (+10d) | 2021-05-11 → 2021-05-21 (+10d) |  | 0.25d → 0.5d |  |
| 122 | G11小组例会 | 2021-05-12 → 2021-05-21 (+9d) | 2021-05-12 → 2021-05-21 (+9d) |  | 1d → 10d |  |
| 123 | 更新需求规格说明书 | 2021-05-13 → 2021-05-23 (+10d) | 2021-05-13 → 2021-05-23 (+10d) |  |  |  |
| 124 | **需求验证** | 2021-05-13 → 2021-05-23 (+10d) | 2021-05-15 → 2021-05-25 (+10d) |  | 0d → 0.25d |  |
| 125 | 测试需求 | 2021-05-13 → 2021-05-23 (+10d) | 2021-05-14 → 2021-05-24 (+10d) |  | 0d → 0.25d |  |
| 126 | 原型修改 | 2021-05-13 → 2021-05-23 (+10d) | 2021-05-14 → 2021-05-24 (+10d) |  |  |  |
| 127 | 原型确认 | 2021-05-15 → 2021-05-25 (+10d) | 2021-05-15 → 2021-05-25 (+10d) |  |  |  |
| 128 | **需求管理** | 2021-05-15 → 2021-05-25 (+10d) | 2021-05-15 → 2021-05-25 (+10d) |  | 0d → 0.25d |  |
| 129 | 更新需求基线 | 2021-05-15 → 2021-05-25 (+10d) | 2021-05-15 → 2021-05-25 (+10d) |  | 0d → 0.25d |  |
| 130 | 更新需求跟踪信息 | 2021-05-15 → 2021-05-25 (+10d) | 2021-05-15 → 2021-05-25 (+10d) |  | 0d → 0.25d |  |
| 131 | 后向跟踪 | 2021-05-15 → 2021-05-25 (+10d) | 2021-05-15 → 2021-05-25 (+10d) |  | 0d → 0.25d |  |
| 132 | 前向跟踪 | 2021-05-15 → 2021-05-25 (+10d) | 2021-05-15 → 2021-05-25 (+10d) |  | 0d → 0.25d |  |
| 133 | 更新变更控制 | 2021-05-15 → 2021-05-25 (+10d) | 2021-05-15 → 2021-05-25 (+10d) |  | 0d → 0.25d |  |
| 134 | G11小组第十六次会议 | 2021-05-16 → 2021-05-26 (+10d) | 2021-05-16 → 2021-05-26 (+10d) |  | 0d → 8.75d |  |
| 135 | **需求第四次迭代** | 2021-05-17 → 2021-05-27 (+10d) | 2021-05-24 → 2021-06-03 (+10d) | 1.75d? → 5.25d? | 0d → none |  |
| 136 | **需求获取** | 2021-05-17 → 2021-05-27 (+10d) | 2021-05-17 → 2021-05-27 (+10d) |  |  |  |
| 137 | 用户访谈 | 2021-05-17 → 2021-05-27 (+10d) | 2021-05-17 → 2021-05-27 (+10d) |  |  |  |
| 138 | **需求分析** | 2021-05-18 → 2021-05-27 (+9d) | 2021-05-21 → 2021-05-31 (+10d) | 0.75d? → 1d? |  |  |
| 139 | 更新需求建模 | 2021-05-18 → 2021-05-28 (+10d) | 2021-05-19 → 2021-05-29 (+10d) |  |  |  |
| 140 | 更新需求细化 | 2021-05-18 → 2021-05-28 (+10d) | 2021-05-18 → 2021-05-28 (+10d) |  |  |  |
| 141 | 原型更新 | 2021-05-18 → 2021-05-28 (+10d) | 2021-05-19 → 2021-05-29 (+10d) |  |  |  |
| 142 | G11小组例会 | 2021-05-19 → 2021-05-27 (+8d) | 2021-05-19 → 2021-05-27 (+8d) |  | 0.5d → 1d |  |
| 143 | 数据字典更新 | 2021-05-20 → 2021-05-30 (+10d) | 2021-05-21 → 2021-05-31 (+10d) |  |  |  |
| 144 | 子系统更新 | 2021-05-20 → 2021-05-30 (+10d) | 2021-05-20 → 2021-05-30 (+10d) |  |  |  |
| 145 | 更新需求规格说明书 | 2021-05-22 → 2021-06-01 (+10d) | 2021-05-22 → 2021-06-01 (+10d) |  |  |  |
| 146 | **需求验证** | 2021-05-22 → 2021-06-01 (+10d) | 2021-05-24 → 2021-06-03 (+10d) |  |  |  |
| 147 | 测试需求 | 2021-05-22 → 2021-06-01 (+10d) | 2021-05-23 → 2021-06-02 (+10d) |  |  |  |
| 148 | 原型修改 | 2021-05-22 → 2021-06-01 (+10d) | 2021-05-23 → 2021-06-02 (+10d) |  |  |  |
| 149 | G11小组例会 | 2021-05-23 → 2021-06-02 (+10d) | 2021-05-23 → 2021-06-02 (+10d) |  |  |  |
| 150 | 原型确认 | 2021-05-24 → 2021-06-03 (+10d) | 2021-05-24 → 2021-06-03 (+10d) |  |  |  |
| 151 | **需求管理** | 2021-05-24 → 2021-06-03 (+10d) | 2021-05-24 → 2021-06-03 (+10d) |  |  |  |
| 152 | 更新需求基线 | 2021-05-24 → 2021-06-03 (+10d) | 2021-05-24 → 2021-06-03 (+10d) |  |  |  |
| 153 | 更新需求跟踪信息 | 2021-05-24 → 2021-06-03 (+10d) | 2021-05-24 → 2021-06-03 (+10d) |  |  |  |
| 154 | 后向跟踪 | 2021-05-24 → 2021-06-03 (+10d) | 2021-05-24 → 2021-06-03 (+10d) |  |  |  |
| 155 | 前向跟踪 | 2021-05-24 → 2021-06-03 (+10d) | 2021-05-24 → 2021-06-03 (+10d) |  |  |  |
| 156 | 更新变更控制 | 2021-05-24 → 2021-06-03 (+10d) | 2021-05-24 → 2021-06-03 (+10d) |  |  |  |
| 157 | **需求第五次迭代** | 2021-05-25 → 2021-06-04 (+10d) | 2021-06-01 → 2021-06-11 (+10d) | 1.75d? → 5.25d? | 0d → none |  |
| 158 | **需求获取** | 2021-05-25 → 2021-06-04 (+10d) | 2021-05-25 → 2021-06-04 (+10d) |  |  |  |
| 159 | 用户访谈 | 2021-05-25 → 2021-06-04 (+10d) | 2021-05-25 → 2021-06-04 (+10d) |  | 3.25d → 0.75d |  |
| 160 | **需求分析** | 2021-05-26 → 2021-06-05 (+10d) | 2021-05-29 → 2021-06-08 (+10d) |  | 3.25d → 0.75d |  |
| 161 | 更新需求建模 | 2021-05-26 → 2021-06-05 (+10d) | 2021-05-27 → 2021-06-06 (+10d) |  | 3.25d → 0.75d |  |
| 162 | 更新需求细化 | 2021-05-26 → 2021-06-05 (+10d) | 2021-05-26 → 2021-06-05 (+10d) |  | 3.5d → 1d |  |
| 163 | G11小组例会 | 2021-05-26 → 2021-06-05 (+10d) | 2021-05-26 → 2021-06-05 (+10d) |  | 4d → 1.5d |  |
| 164 | 原型更新 | 2021-05-26 → 2021-06-05 (+10d) | 2021-05-27 → 2021-06-06 (+10d) |  | 3.75d → 1.25d |  |
| 165 | 数据字典更新 | 2021-05-28 → 2021-06-07 (+10d) | 2021-05-29 → 2021-06-08 (+10d) |  | 3.25d → 0.75d |  |
| 166 | 子系统更新 | 2021-05-28 → 2021-06-07 (+10d) | 2021-05-28 → 2021-06-07 (+10d) |  | 3.5d → 1d |  |
| 167 | G11小组例会 | 2021-05-30 → 2021-06-09 (+10d) | 2021-05-30 → 2021-06-09 (+10d) |  | 3.75d → 1.25d |  |
| 168 | 更新需求规格说明书 | 2021-05-30 → 2021-06-09 (+10d) | 2021-05-30 → 2021-06-09 (+10d) |  | 3.75d → 1.25d |  |
| 169 | **需求验证** | 2021-05-30 → 2021-06-09 (+10d) | 2021-06-01 → 2021-06-11 (+10d) |  | 3.25d → 0.75d |  |
| 170 | 测试需求 | 2021-05-30 → 2021-06-09 (+10d) | 2021-05-31 → 2021-06-10 (+10d) |  | 3.25d → 0.75d |  |
| 171 | 原型修改 | 2021-05-30 → 2021-06-09 (+10d) | 2021-05-31 → 2021-06-10 (+10d) |  | 3.25d → 0.75d |  |
| 172 | 原型确认 | 2021-06-01 → 2021-06-11 (+10d) | 2021-06-01 → 2021-06-11 (+10d) |  | 3.25d → 0.75d |  |
| 173 | **需求管理** | 2021-06-01 → 2021-06-11 (+10d) | 2021-06-01 → 2021-06-11 (+10d) |  | 3.25d → 0.75d |  |
| 174 | 更新需求基线 | 2021-06-01 → 2021-06-11 (+10d) | 2021-06-01 → 2021-06-11 (+10d) |  | 3.25d → 0.75d |  |
| 175 | 跟新需求跟踪信息 | 2021-06-01 → 2021-06-11 (+10d) | 2021-06-01 → 2021-06-11 (+10d) |  | 3.25d → 0.75d |  |

| ID | Task | Start | Finish | Total float | Other |
| --- | --- | --- | --- | --- | --- |
| 176 | 后向跟踪 | 2021-06-01 → 2021-06-11 (+10d) | 2021-06-01 → 2021-06-11 (+10d) | 3.25d → 0.75d |  |
| 177 | 前向跟踪 | 2021-06-01 → 2021-06-11 (+10d) | 2021-06-01 → 2021-06-11 (+10d) | 3.25d → 0.75d |  |
| 178 | 更新变更控制 | 2021-06-01 → 2021-06-11 (+10d) | 2021-06-01 → 2021-06-11 (+10d) | 3.25d → 0.75d |  |
| 179 | **设计与开发阶段** | 2021-06-02 → 2021-06-12 (+10d) | 2021-06-10 → 2021-06-20 (+10d) | 3.25d → 0.75d |  |
| 180 | **需求变更（延期概要设计）** | 2021-06-02 → 2021-06-12 (+10d) | 2021-06-06 → 2021-06-16 (+10d) | 3.25d → 0.75d |  |
| 181 | 访谈确认变更点 | 2021-06-02 → 2021-06-12 (+10d) | 2021-06-02 → 2021-06-12 (+10d) | 3.25d → 0.75d |  |
| 182 | G11小组例会 | 2021-06-02 → 2021-06-12 (+10d) | 2021-06-02 → 2021-06-12 (+10d) | 4.25d → 1.75d | was named G11小组第二十一次会议 |
| 183 | 导入需求至需求管理工具 | 2021-06-03 → 2021-06-13 (+10d) | 2021-06-03 → 2021-06-13 (+10d) | 3.25d → 0.75d |  |
| 184 | 需求影响分析报告 | 2021-06-03 → 2021-06-13 (+10d) | 2021-06-04 → 2021-06-14 (+10d) | 3.75d → 1.25d |  |
| 185 | 导入界面原型至需求管理工具 | 2021-06-03 → 2021-06-13 (+10d) | 2021-06-03 → 2021-06-13 (+10d) | 3.25d → 0.75d |  |
| 186 | 导入测试用例至需求管理工具 | 2021-06-03 → 2021-06-13 (+10d) | 2021-06-03 → 2021-06-13 (+10d) | 3.25d → 0.75d |  |
| 187 | 需求管理工具中评价工作量 | 2021-06-04 → 2021-06-14 (+10d) | 2021-06-04 → 2021-06-14 (+10d) | 3.25d → 0.75d |  |
| 188 | 访谈确认变更 | 2021-06-05 → 2021-06-15 (+10d) | 2021-06-05 → 2021-06-15 (+10d) | 3.25d → 0.75d |  |
| 189 | G11小组例会 | 2021-06-06 → 2021-06-16 (+10d) | 2021-06-06 → 2021-06-16 (+10d) | 3.25d → 0.75d |  |
| 190 | 修订文档 | 2021-06-06 → 2021-06-16 (+10d) | 2021-06-06 → 2021-06-16 (+10d) | 3.25d → 0.75d |  |
| 191 | **概要设计** | 2021-06-07 → 2021-06-17 (+10d) | 2021-06-09 → 2021-06-19 (+10d) | 3.25d → 0.75d |  |
| 192 | 设计数据库 | 2021-06-07 → 2021-06-17 (+10d) | 2021-06-07 → 2021-06-17 (+10d) | 3.25d → 0.75d |  |
| 193 | 体系结构设计 | 2021-06-07 → 2021-06-17 (+10d) | 2021-06-07 → 2021-06-17 (+10d) | 3.25d → 0.75d |  |
| 194 | 编写概要设计文档 | 2021-06-08 → 2021-06-18 (+10d) | 2021-06-09 → 2021-06-19 (+10d) | 5.25d → 2.75d |  |
| 195 | 编写测试计划 | 2021-06-08 → 2021-06-18 (+10d) | 2021-06-09 → 2021-06-19 (+10d) | 5.25d → 2.75d |  |
| 196 | **详细设计** | 2021-06-08 → 2021-06-18 (+10d) | 2021-06-09 → 2021-06-19 (+10d) | 3.25d → 0.75d |  |
| 197 | 编写接口文档 | 2021-06-08 → 2021-06-18 (+10d) | 2021-06-08 → 2021-06-18 (+10d) | 3.5d → 1d |  |
| 198 | 编写详细设计文档 | 2021-06-08 → 2021-06-18 (+10d) | 2021-06-09 → 2021-06-19 (+10d) | 3.25d → 0.75d |  |
| 199 | G11小组例会 | 2021-06-09 → 2021-06-12 (+3d) | 2021-06-09 → 2021-06-12 (+3d) | 5.25d → 4.5d |  |
| 200 | 整合设计文档 | 2021-06-10 → 2021-06-20 (+10d) | 2021-06-10 → 2021-06-20 (+10d) | 3.25d → 0.75d |  |
| 202 | 客户端编码 | 2021-06-15 → 2021-06-21 (+6d) | 2021-06-16 → 2021-06-22 (+6d) | 2.25d → 0.75d |  |
| 203 | 后端编码 | 2021-06-15 → 2021-06-21 (+6d) | 2021-06-16 → 2021-06-22 (+6d) | 2.25d → 0.75d |  |
| 204 | 管理员端编码 | 2021-06-15 → 2021-06-21 (+6d) | 2021-06-16 → 2021-06-22 (+6d) | 2.25d → 0.75d |  |
| 206 | 单元测试 | 2021-06-17 → 2021-06-23 (+6d) | 2021-06-18 → 2021-06-24 (+6d) | 2.25d → 0.75d |  |
| 207 | 集成测试 | 2021-06-19 → 2021-06-25 (+6d) | 2021-06-20 → 2021-06-26 (+6d) | 2.25d → 0.75d |  |

## Version 8 (saved 2021-04-14, file SRA2021-G11-项目计划v1.0.4.mpp)

Note of the change: Update SRA2021-G11-项目计划v1.0.4.mpp

Last finish stays 2021-06-30. Complete tasks 33 → 35.

Changed:

| ID | Task | Start | Finish | Complete | Total float | Other |
| --- | --- | --- | --- | --- | --- | --- |
| 1 | **渔乎APP项目开发** |  |  | 14% → 15% |  |  |
| 33 | **软件需求分析（延后）** |  |  | 5% → 6% |  |  |
| 34 | **需求第一次迭代** |  |  | 12% → 16% |  |  |
| 35 | **需求获取** |  |  | 46% → 61% |  |  |
| 38 | **选择信息的来源** |  |  | 53% → 99% | -0.75d → 0d |  |
| 42 | 识别直接用户需求（延后） | 2021-04-13 A | 2021-04-13 A | 0% → 100% | -0.75d → none | was named 识别用户需求（延后） |
| 43 | 识别系统事件和响应(延后) | 2021-04-14 A | 2021-04-14 A | 0% → 100% | -0.75d → none | resources 伊君琛 → 沈瑞杰 |
| 46 | 识别管理员需求 |  |  |  |  | was named 举行引导式需求获取讨论会 |

## Version 9 (saved 2021-04-19, file SRA2021-G11-项目计划v1.0.5.mpp)

Note of the change: 项目进度更新

Last finish stays 2021-06-30. Complete tasks 35 → 43.

Changed:

| ID | Task | Start | Finish | Complete | Total float |
| --- | --- | --- | --- | --- | --- |
| 1 | **渔乎APP项目开发** |  |  | 15% → 18% |  |
| 33 | **软件需求分析（延后）** |  |  | 6% → 11% |  |
| 34 | **需求第一次迭代** |  |  | 16% → 29% |  |
| 35 | **需求获取** |  | 2021-04-19 A | 61% → 100% | -0.5d → none |
| 38 | **选择信息的来源** |  | 2021-04-14 A | 99% → 100% | 0d → none |
| 43 | G11小组例会 | 2021-04-14 A | 2021-04-14 A | 0% → 100% | 19.25d → none |
| 46 | **选择获取方法，执行获取** | 2021-04-15 A | 2021-04-17 A | 0% → 100% |  |
| 47 | 识别管理员需求 | 2021-04-15 A | 2021-04-15 A | 0% → 100% | -0.75d → none |
| 48 | 观察用户如何完成工作 | 2021-04-16 A | 2021-04-16 A | 0% → 100% | -0.75d → none |
| 49 | 分发调查问卷 | 2021-04-17 A | 2021-04-17 A | 0% → 100% | -0.75d → none |
| 50 | **记录获取结果** | 2021-04-18 A | 2021-04-19 A | 0% → 100% | -0.75d → none |
| 51 | 分析文档 | 2021-04-18 A | 2021-04-18 A | 0% → 100% | -0.75d → none |
| 52 | 检查问题报告 | 2021-04-19 A | 2021-04-19 A | 0% → 100% | -0.75d → none |
| 53 | G11小组例会 | 2021-04-07 A | 2021-04-07 A | 0% → 100% | 2.25d → none |
| 54 | **需求分析** |  |  | 0% → 1% |  |
| 62 | G11小组例会 | 2021-04-18 A | 2021-04-18 A | 0% → 100% | 18.12d → none |

## Version 10 (saved 2021-04-20, file SRA2021-G11-项目计划v1.0.5.mpp)

Note of the change: Update SRA2021-G11-项目计划v1.0.5.mpp

Last finish stays 2021-06-30.

Changed:

| ID | Task | Start | Duration | Complete | Total float | Other |
| --- | --- | --- | --- | --- | --- | --- |
| 34 | **需求第一次迭代** |  | 10.75d? → 10.5d? | 29% → 30% | 13.38d → 13.62d |  |
| 55 | 市场调研报告 |  |  |  | -0.75d → 0d | was named 背景分析 |
| 56 | 访谈渔具店用户 |  |  |  | -0.75d → 0d | was named 确定系统边界 |
| 67 | 原型确认 | 2021-05-04 → 2021-05-06 (+2d) | 1d? → 0.25d? |  | -0.75d → 13.62d | constraint none → finish no earlier than 2021-05-07 |

## Version 11 (saved 2021-04-22, file SRA2021-G11-项目计划v1.0.6.mpp)

Note of the change: Update SRA2021-G11-项目计划v1.0.6.mpp

Last finish stays 2021-06-30. Complete tasks 43 → 52.

Added:

| ID | Task | Duration | Start | Finish | Predecessors | Constraint | Resources |
| --- | --- | --- | --- | --- | --- | --- | --- |
| 38 | 制作初步用户原型 | 2h? | 2021-04-01 A | 2021-04-02 A | 37 | finish no earlier than 2021-04-02 | 沈瑞杰 |
| 39 | 制作初步管理员模型 | 2h? | 2021-04-06 A | 2021-04-07 A | 37 | finish no earlier than 2021-04-07 | 梅一枝 |
| 40 | 确认《前景与范围文档》 | 1d | 2021-04-08 A | 2021-04-08 A | 37 | start no earlier than 2021-04-08 | G11小组 |
| 41 | 修改《前景与范围文档》 | 2h | 2021-04-09 A | 2021-04-09 A | 40 | finish no earlier than 2021-04-09 | 黄文涛 |
| 42 | 修改管理员、用户原型 | 4h | 2021-04-10 A | 2021-04-11 A | 41 | finish no earlier than 2021-04-11 | 梅一枝; 沈瑞杰 |
| 43 | 再次确认《前景与范围文档》 | 2h | 2021-04-12 A | 2021-04-12 A | 41 | finish no earlier than 2021-04-12 | G11小组 |

Changed:

| ID | Task | Start | Finish | Duration | Complete | Total float | Predecessors | Other |
| --- | --- | --- | --- | --- | --- | --- | --- | --- |
| 1 | **渔乎APP项目开发** |  |  |  | 18% → 22% |  |  |  |
| 33 | **软件需求分析（延后）** |  |  |  | 11% → 16% |  |  |  |
| 34 | **需求第一次迭代** |  |  |  | 30% → 41% |  |  |  |
| 36 | 收集背景资料 |  |  |  |  |  | none → 32 |  |
| 45 | 识别用户群 |  |  |  |  |  | none → 37 |  |
| 47 | 选择产品代言人 |  |  |  |  |  |  | resources 黄文涛 → 张景雄 |
| 53 | 识别管理员需求 |  |  |  |  |  | none → 47 |  |
| 54 | 识别约钓用户代表需求 |  |  |  |  |  |  | was named 观察用户如何完成工作 |
| 55 | 制作并分发调查问卷 | 2021-04-17 A → 2021-04-16 A (-1d) |  | 1d? → 2d |  |  |  | was named 分发调查问卷; constraint none → finish no earlier than 2021-04-17 |
| 57 | 修改界面原型 |  |  |  |  |  |  | was named 分析文档; resources 黄文涛 → 梅一枝; 沈瑞杰 |
| 58 | QFD客户打分表 |  |  |  |  |  |  | was named 检查问题报告 |
| 60 | **需求分析** |  |  |  | 1% → 21% |  |  |  |
| 61 | 市场调研报告 | 2021-04-20 → 2021-04-19 A (-1d) | 2021-04-20 A | 1d → 2d | 0% → 100% | 0d → none |  | resources 黄文涛 → 张景雄 |
| 62 | 访谈渔具店用户 | 2021-04-21 A | 2021-04-21 A |  | 0% → 100% | 0d → none |  |  |
| 63 | G11小组例会 | 2021-04-21 A | 2021-04-21 A |  | 0% → 100% | 3.25d → none |  |  |

## Version 12 (saved 2021-04-29, file SRA2021-G11-项目计划v1.0.6.mpp)

Note of the change: Merge branch 'main' of https://github.com/SRayJay/SRA2021-G11 into main

Last finish stays 2021-06-30. Complete tasks 52 → 60.

Changed:

| ID | Task | Start | Finish | Complete | Total float | Predecessors | Other |
| --- | --- | --- | --- | --- | --- | --- | --- |
| 64 | 需求建模 | 2021-04-22 A | 2021-04-24 A | 0% → 100% | 0d → none |  |  |
| 65 | 需求细化 | 2021-04-25 A | 2021-04-25 A | 0% → 100% | 0d → none |  |  |
| 66 | 需求协商 | 2021-04-27 A | 2021-04-28 A | 0% → 100% | 0d → none |  |  |
| 68 | ER图创建 | 2021-04-29 A | 2021-04-29 A | 0% → 100% | 1.25d → none |  | was named 数据字典创建 |
| 69 | G11小组例会 | 2021-04-21 A | 2021-04-21 A | 0% → 100% | 17.38d → none |  |  |
| 71 | G11小组例会 | 2021-04-24 A | 2021-04-24 A | 0% → 100% | 16.75d → none |  |  |
| 73 | 建立子系统 | 2021-04-29 → 2021-04-30 (+1d) | 2021-04-29 → 2021-04-30 (+1d) |  | 1.25d → 0d |  | constraint none → start no earlier than 2021-04-30 |
| 75 | 创建需求跟踪能力矩阵 | 2021-04-29 A | 2021-04-29 A | 0% → 100% | 1.5d → none |  |  |
| 79 | 确定优先级 | 2021-04-26 → 2021-05-07 (+11d) | 2021-04-26 → 2021-05-07 (+11d) |  |  | 65 → 58 | constraint none → start no earlier than 2021-05-07 |
| 85 | 更新需求优先级 | 2021-04-29 → 2021-05-06 (+7d) | 2021-04-29 → 2021-05-06 (+7d) |  | 2d → 0d | 66 → none | constraint none → start no earlier than 2021-05-06 |
| 86 | 风险评估 | 2021-04-29 A | 2021-04-29 A | 0% → 100% | 2d → none |  | was named 工作量估算 |

## Version 13 (saved 2021-05-05, file SRA2021-G11-项目计划v1.0.6.mpp)

Note of the change: Update SRA2021-G11-项目计划v1.0.6.mpp

Last finish stays 2021-06-30. Complete tasks 60 → 65.

Removed: 90 前向跟踪

Changed:

| ID | Task | Start | Finish | Complete | Total float | Other |
| --- | --- | --- | --- | --- | --- | --- |
| 70 | 原型开发 | 2021-04-29 A | 2021-05-04 A | 0% → 100% | 0d → none |  |
| 78 | 编写用例说明 | 2021-05-05 A | 2021-05-05 A | 0% → 100% | 0d → none | was named 编写测试用例 |
| 80 | 原型修改 | 2021-05-05 A | 2021-05-05 A | 0% → 100% | 0.25d → none |  |
| 81 | 原型确认 | 2021-05-06 A | 2021-05-06 A | 0% → 100% | 0.25d → none |  |
| 88 | 建立需求跟踪信息 | 2021-04-30 A | 2021-04-30 A | 0% → 100% | 2d → none |  |

## Version 14 (saved 2021-05-13, file SRA2021-G11-项目计划v1.0.6.mpp)

Note of the change: Update SRA2021-G11-项目计划v1.0.6.mpp

Last finish stays 2021-06-30. Complete tasks 65 → 79.

Removed: 91 进行变更控制; 92 业务影响分析; 93 技术影响分析; 94 项目影响分析

Changed:

| ID | Task | Start | Finish | Complete | Total float |
| --- | --- | --- | --- | --- | --- |
| 77 | 测试需求 | 2021-05-05 A | 2021-05-05 A | 0% → 100% | 0d → none |
| 82 | 编写用户手册 | 2021-05-07 A | 2021-05-07 A | 0% → 100% | 0.25d → none |
| 87 | 未完成项合并 | 2021-05-06 A | 2021-05-06 A | 0% → 100% | 0.25d → none |
| 89 | 后向跟踪 | 2021-05-06 A | 2021-05-06 A | 0% → 100% | 0.5d → none |
| 90 | G11小组第十次会议 | 2021-05-07 A | 2021-05-07 A | 0% → 100% | 0d → none |
| 92 | G11小组例会 | 2021-05-08 A | 2021-05-08 A | 0% → 100% | 0d → none |
| 94 | 用户访谈 | 2021-05-09 A | 2021-05-09 A | 0% → 100% | 0d → none |
| 96 | 更新需求建模 | 2021-05-10 A | 2021-05-10 A | 0% → 100% | 0d → none |
| 97 | 更新需求细化 | 2021-05-10 A | 2021-05-11 A | 0% → 100% | 0d → none |
| 98 | 原型更新 | 2021-05-10 A | 2021-05-11 A | 0% → 100% | 0d → none |
| 99 | 数据字典更新 | 2021-05-12 A | 2021-05-13 A | 0% → 100% | 0d → none |
| 100 | 子系统更新 | 2021-05-12 A | 2021-05-12 A | 0% → 100% | 0d → none |
| 101 | G11小组例会 | 2021-05-12 A | 2021-05-12 A | 0% → 100% | 0d → none |
| 102 | 更新需求规格说明书 | 2021-05-12 A | 2021-05-13 A | 0% → 100% | 0d → none |

## Version 15 (saved 2021-05-20, file SRA2021-G11-项目计划v1.0.7.mpp)

Note of the change: Merge branch 'main' of https://github.com/SRayJay/SRA2021-G11 into main

Last finish stays 2021-06-30. Complete tasks 79 → 96.

Changed:

| ID | Task | Start | Finish | Complete | Total float |
| --- | --- | --- | --- | --- | --- |
| 34 | **需求第一次迭代** |  |  | 41% → 100% |  |
| 60 | **需求分析** |  |  | 21% → 100% |  |
| 72 | 原型确认 | 2021-05-06 A | 2021-05-07 A | 0% → 100% | 0d → none |
| 73 | 建立子系统 | 2021-04-30 A | 2021-04-30 A | 0% → 100% | 0d → none |
| 74 | **编写需求规格说明书** |  |  | 0% → 100% |  |
| 76 | **需求验证** |  |  | 0% → 100% |  |
| 79 | 确定优先级 | 2021-05-07 A | 2021-05-07 A | 0% → 100% | 0d → none |
| 83 | **需求管理** |  |  | 0% → 100% |  |
| 84 | **建立需求基线** |  |  | 0% → 100% |  |
| 85 | 更新需求优先级 | 2021-05-06 A | 2021-05-06 A | 0% → 100% | 0d → none |
| 91 | **需求第二次迭代** |  |  | 0% → 100% |  |
| 93 | **需求获取** |  |  | 0% → 100% |  |
| 95 | **需求分析** |  |  | 0% → 100% |  |
| 103 | **需求验证** |  |  | 0% → 100% |  |
| 104 | 测试需求 | 2021-05-14 A | 2021-05-15 A | 0% → 100% | 0d → none |
| 105 | 原型修改 | 2021-05-14 A | 2021-05-15 A | 0% → 100% | 0d → none |
| 106 | 原型确认 | 2021-05-16 A | 2021-05-16 A | 0% → 100% | 0d → none |
| 107 | **需求管理** |  |  | 0% → 100% |  |
| 108 | 更新需求基线 | 2021-05-17 A | 2021-05-17 A | 0% → 100% | 0d → none |
| 109 | 更新需求跟踪信息 | 2021-05-17 A | 2021-05-17 A | 0% → 100% | 0d → none |
| 110 | 后向跟踪 | 2021-05-17 A | 2021-05-17 A | 0% → 100% | 0d → none |
| 111 | 前向跟踪 | 2021-05-17 A | 2021-05-17 A | 0% → 100% | 0d → none |
| 112 | 更新变更控制 | 2021-05-17 A | 2021-05-17 A | 0% → 100% | 0d → none |
| 114 | **需求获取** |  |  | 0% → 100% |  |
| 115 | 用户访谈 | 2021-05-18 A | 2021-05-18 A | 0% → 100% | 0d → none |
| 117 | G11小组例会 | 2021-05-19 A | 2021-05-19 A | 0% → 100% | 0d → none |
| 118 | 更新需求建模 | 2021-05-19 A | 2021-05-20 A | 0% → 100% | 0d → none |
| 119 | 更新需求细化 | 2021-05-19 A | 2021-05-19 A | 0% → 100% | 0d → none |
| 120 | 原型更新 | 2021-05-19 A | 2021-05-20 A | 0% → 100% | 0d → none |

## Version 16 (saved 2021-05-26, file SRA2021-G11-项目计划v1.0.8.mpp)

Note of the change: Create SRA2021-G11-项目计划v1.0.8.mpp

Last finish stays 2021-06-30. Complete tasks 96 → 109.

Changed:

| ID | Task | Start | Finish | Complete | Total float |
| --- | --- | --- | --- | --- | --- |
| 113 | **需求第三次迭代** |  |  | 0% → 100% |  |
| 116 | **需求分析** |  |  | 0% → 100% |  |
| 121 | 数据字典更新 | 2021-05-21 A | 2021-05-22 A | 0% → 100% | 0d → none |
| 122 | 子系统更新 | 2021-05-21 A | 2021-05-21 A | 0% → 100% | 0d → none |
| 123 | G11小组例会 | 2021-05-21 A | 2021-05-21 A | 0% → 100% | 0d → none |
| 124 | 更新需求规格说明书 | 2021-05-23 A | 2021-05-23 A | 0% → 100% | 0d → none |
| 125 | **需求验证** |  |  | 0% → 100% |  |
| 126 | 测试需求 | 2021-05-23 A | 2021-05-24 A | 0% → 100% | 0d → none |
| 127 | 原型修改 | 2021-05-23 A | 2021-05-24 A | 0% → 100% | 0d → none |
| 128 | 原型确认 | 2021-05-25 A | 2021-05-25 A | 0% → 100% | 0d → none |
| 129 | **需求管理** |  |  | 0% → 100% |  |
| 130 | 更新需求基线 | 2021-05-25 A | 2021-05-25 A | 0% → 100% | 0d → none |
| 131 | 更新需求跟踪信息 | 2021-05-25 A | 2021-05-25 A | 0% → 100% | 0d → none |
| 132 | 后向跟踪 | 2021-05-25 A | 2021-05-25 A | 0% → 100% | 0d → none |
| 133 | 前向跟踪 | 2021-05-25 A | 2021-05-25 A | 0% → 100% | 0d → none |
| 134 | 更新变更控制 | 2021-05-25 A | 2021-05-25 A | 0% → 100% | 0d → none |
| 135 | G11小组第十六次会议 | 2021-05-26 A | 2021-05-26 A | 0% → 100% | 0d → none |

## Version 17 (saved 2021-06-03, file SRA2021-G11-项目计划v1.0.8.mpp)

Note of the change: ppt

Last finish stays 2021-06-30. Complete tasks 109 → 121.

Changed:

| ID | Task | Start | Finish | Complete | Total float | Other |
| --- | --- | --- | --- | --- | --- | --- |
| 138 | 用户打分 | 2021-05-27 A | 2021-05-27 A | 0% → 100% | 0d → none | was named 用户访谈 |
| 140 | 更新需求建模 | 2021-05-28 A | 2021-05-29 A | 0% → 100% | 0d → none |  |
| 141 | 更新需求细化 | 2021-05-28 A | 2021-05-28 A | 0% → 100% | 0d → none |  |
| 142 | 原型更新 | 2021-05-28 A | 2021-05-29 A | 0% → 100% | 0d → none |  |
| 143 | G11小组例会 | 2021-05-27 A | 2021-05-27 A | 0% → 100% | 0d → none |  |
| 144 | 数据字典更新 | 2021-05-30 A | 2021-05-31 A | 0% → 100% | 0d → none |  |
| 145 | 子系统更新 | 2021-05-30 A | 2021-05-30 A | 0% → 100% | 0d → none |  |
| 146 | 更新需求规格说明书 | 2021-06-01 A | 2021-06-01 A | 0% → 100% | 0d → none |  |
| 148 | 测试需求 | 2021-06-01 A | 2021-06-02 A | 0% → 100% | 0d → none |  |
| 149 | 原型修改 | 2021-06-01 A | 2021-06-02 A | 0% → 100% | 0d → none |  |
| 150 | G11小组例会 | 2021-06-02 A | 2021-06-02 A | 0% → 100% | 0d → none |  |
| 151 | 原型确认 | 2021-06-03 A | 2021-06-03 A | 0% → 100% | 0d → none |  |

## Version 18 (saved 2021-06-15, file SRA2021-G11-项目计划v1.0.9.mpp)

Note of the change: Create SRA2021-G11-项目计划v1.0.9.mpp

Last finish stays 2021-06-30. Complete tasks 121 → 153.

Changed:

| ID | Task | Start | Finish | Complete | Total float |
| --- | --- | --- | --- | --- | --- |
| 152 | **需求管理** |  |  | 0% → 100% |  |
| 153 | 更新需求基线 | 2021-06-03 A | 2021-06-03 A | 0% → 100% | 0d → none |
| 154 | 更新需求跟踪信息 | 2021-06-03 A | 2021-06-03 A | 0% → 100% | 0d → none |
| 155 | 后向跟踪 | 2021-06-03 A | 2021-06-03 A | 0% → 100% | 0d → none |
| 156 | 前向跟踪 | 2021-06-03 A | 2021-06-03 A | 0% → 100% | 0d → none |
| 157 | 更新变更控制 | 2021-06-03 A | 2021-06-03 A | 0% → 100% | 0d → none |
| 158 | **需求第五次迭代** |  |  | 0% → 100% |  |
| 159 | **需求获取** |  |  | 0% → 100% |  |
| 160 | 用户访谈 | 2021-06-04 A | 2021-06-04 A | 0% → 100% | 0d → none |
| 161 | **需求分析** |  |  | 0% → 100% |  |
| 162 | 更新需求建模 | 2021-06-05 A | 2021-06-06 A | 0% → 100% | 0d → none |
| 163 | 更新需求细化 | 2021-06-05 A | 2021-06-05 A | 0% → 100% | 0d → none |
| 164 | G11小组例会 | 2021-06-05 A | 2021-06-05 A | 0% → 100% | 0d → none |
| 165 | 原型更新 | 2021-06-05 A | 2021-06-06 A | 0% → 100% | 0d → none |
| 166 | 数据字典更新 | 2021-06-07 A | 2021-06-08 A | 0% → 100% | 0d → none |
| 167 | 子系统更新 | 2021-06-07 A | 2021-06-07 A | 0% → 100% | 0d → none |
| 168 | G11小组例会 | 2021-06-09 A | 2021-06-09 A | 0% → 100% | 0d → none |
| 169 | 更新需求规格说明书 | 2021-06-09 A | 2021-06-09 A | 0% → 100% | 0d → none |
| 170 | **需求验证** |  |  | 0% → 100% |  |
| 171 | 测试需求 | 2021-06-09 A | 2021-06-10 A | 0% → 100% | 0d → none |
| 172 | 原型修改 | 2021-06-09 A | 2021-06-10 A | 0% → 100% | 0d → none |
| 173 | 原型确认 | 2021-06-11 A | 2021-06-11 A | 0% → 100% | 0d → none |
| 174 | **需求管理** |  |  | 0% → 100% |  |
| 175 | 更新需求基线 | 2021-06-11 A | 2021-06-11 A | 0% → 100% | 0d → none |
| 176 | 跟新需求跟踪信息 | 2021-06-11 A | 2021-06-11 A | 0% → 100% | 0d → none |
| 177 | 后向跟踪 | 2021-06-11 A | 2021-06-11 A | 0% → 100% | 0d → none |
| 178 | 前向跟踪 | 2021-06-11 A | 2021-06-11 A | 0% → 100% | 0d → none |
| 179 | 更新变更控制 | 2021-06-11 A | 2021-06-11 A | 0% → 100% | 0d → none |
| 181 | **需求变更（延期概要设计）** |  |  | 0% → 100% |  |
| 182 | 访谈确认变更点 | 2021-06-12 A | 2021-06-12 A | 0% → 100% | 0d → none |
| 183 | G11小组例会 | 2021-06-12 A | 2021-06-12 A | 0% → 100% | 0d → none |
| 184 | 导入需求至需求管理工具 | 2021-06-13 A | 2021-06-13 A | 0% → 100% | 0d → none |
| 185 | 需求影响分析报告 | 2021-06-13 A | 2021-06-14 A | 0% → 100% | 0d → none |
| 186 | 导入界面原型至需求管理工具 | 2021-06-13 A | 2021-06-13 A | 0% → 100% | 0d → none |
| 187 | 导入测试用例至需求管理工具 | 2021-06-13 A | 2021-06-13 A | 0% → 100% | 0d → none |
| 188 | 需求管理工具中评价工作量 | 2021-06-14 A | 2021-06-14 A | 0% → 100% | 0d → none |
| 189 | 访谈确认变更 | 2021-06-15 A | 2021-06-15 A | 0% → 100% | 0d → none |
| 190 | G11小组例会 | 2021-06-16 A | 2021-06-16 A | 0% → 100% | 0d → none |
| 191 | 修订文档 | 2021-06-16 A | 2021-06-16 A | 0% → 100% | 0d → none |

## Version 19 (saved 2021-06-17, file SRA2021-G11-项目计划v1.0.9.mpp)

Note of the change: Merge branch 'main' of https://github.com/SRayJay/SRA2021-G11 into main

Last finish 2021-06-30 → 2021-07-01 (+1d). Complete tasks 153 → 154.

Removed: 194 体系结构设计; 199 编写详细设计文档; 202 实现、测试阶段; 203 客户端编码; 204 后端编码; 205 管理员端编码; 206 G11小组例会; 207 单元测试; 208 集成测试; 209 G11小组例会

Changed:

| ID | Task | Start | Finish | Duration | Complete | Total float | Predecessors | Other |
| --- | --- | --- | --- | --- | --- | --- | --- | --- |
| 192 | **概要设计** |  | 2021-06-19 → 2021-06-21 (+2d) | 0.5d? → 4.5d |  | 0d → none |  |  |
| 193 | 设计数据库 | 2021-06-17 A | 2021-06-17 A |  | 0% → 100% | 0d → none |  |  |
| 194 | 编写概要设计文档 |  | 2021-06-19 → 2021-06-21 (+2d) |  |  |  | 193, 体系结构设计 → 193 | constraint none → finish no earlier than 2021-06-21 |
| 195 | 编写测试计划 |  | 2021-06-19 → 2021-06-21 (+2d) |  |  |  | 193, 体系结构设计 → 193 | constraint none → finish no earlier than 2021-06-21 |
| 196 | **接口设计** | 2021-06-18 → 2021-06-23 (+5d) | 2021-06-19 → 2021-06-27 (+8d) | 0.25d? → 4.5d |  | 0d → none |  | was named 详细设计 |
| 197 | 编写接口文档 | 2021-06-18 → 2021-06-23 (+5d) | 2021-06-18 → 2021-06-27 (+9d) | 1d? → 5d? |  |  | 193, 体系结构设计 → none | constraint none → start no earlier than 2021-06-23 |
| 198 | G11小组例会 | 2021-06-12 → 2021-06-27 (+15d) | 2021-06-12 → 2021-06-27 (+15d) |  |  |  |  | constraint start no earlier than 2021-06-09 → start no earlier than 2021-06-27 |
| 199 | 整合设计文档 | 2021-06-20 → 2021-06-28 (+8d) | 2021-06-20 → 2021-06-30 (+10d) | 1d? → 3d? |  |  |  | constraint start no earlier than 2021-06-09 → finish no earlier than 2021-06-30 |
| 200 | 项目收尾 | 2021-06-21 → 2021-07-01 (+10d) | 2021-06-21 → 2021-07-01 (+10d) |  |  |  | 实现、测试阶段 → none | constraint none → start no earlier than 2021-07-01 |

## Version 20 (saved 2021-06-22, file SRA2021-G11-项目计划v1.1.0.mpp)

Note of the change: 需求变更文档更新

Last finish stays 2021-07-01.

Removed: 196 接口设计; 197 编写接口文档

Changed:

| ID | Task | Start | Finish | Duration | Total float | Predecessors |
| --- | --- | --- | --- | --- | --- | --- |
| 181 | **需求变更（延期概要设计）** | 2021-06-12 → 2021-06-16 (+4d) | 2021-06-16 → 2021-06-24 (+8d) | 1d? → 5.5d | 0d → none |  |
| 182 | 访谈确认变更点 | 2021-06-12 A → 2021-06-16 A (+4d) | 2021-06-12 A → 2021-06-16 A (+4d) |  |  |  |
| 183 | G11小组例会 | 2021-06-12 A → 2021-06-16 A (+4d) | 2021-06-12 A → 2021-06-16 A (+4d) |  |  |  |
| 184 | 导入需求至需求管理工具 | 2021-06-13 A → 2021-06-17 A (+4d) | 2021-06-13 A → 2021-06-17 A (+4d) |  |  |  |
| 185 | 需求影响分析报告 | 2021-06-13 A → 2021-06-18 A (+5d) | 2021-06-14 A → 2021-06-19 A (+5d) |  |  |  |
| 186 | 导入界面原型至需求管理工具 | 2021-06-13 A → 2021-06-19 A (+6d) | 2021-06-13 A → 2021-06-19 A (+6d) |  |  |  |
| 187 | 导入测试用例至需求管理工具 | 2021-06-13 A → 2021-06-20 A (+7d) | 2021-06-13 A → 2021-06-20 A (+7d) |  |  |  |
| 188 | 需求管理工具中评价工作量 | 2021-06-14 A → 2021-06-21 A (+7d) | 2021-06-14 A → 2021-06-21 A (+7d) |  |  |  |
| 189 | 访谈确认变更 | 2021-06-15 A → 2021-06-22 A (+7d) | 2021-06-15 A → 2021-06-22 A (+7d) |  |  |  |
| 190 | G11小组例会 | 2021-06-16 A → 2021-06-23 A (+7d) | 2021-06-16 A → 2021-06-23 A (+7d) |  |  |  |
| 191 | 修订文档 | 2021-06-16 A → 2021-06-24 A (+8d) | 2021-06-16 A → 2021-06-24 A (+8d) |  |  |  |
| 197 | 整合设计文档 |  |  |  |  | 接口设计 → none |

## Version 21 (saved 2021-06-24, file SRA2021-G11-项目计划v1.1.0.mpp)

Note of the change: Update SRA2021-G11-项目计划v1.1.0.mpp

Last finish stays 2021-07-01. Complete tasks 154 → 155.

Removed: 195 编写测试计划

Changed:

| ID | Task | Start | Finish | Complete | Total float |
| --- | --- | --- | --- | --- | --- |
| 194 | 编写概要设计文档 | 2021-06-18 A | 2021-06-21 A | 0% → 100% | 0d → none |

## Version 22 (saved 2021-06-28, file SRA2021-G11-项目计划v1.1.0.mpp)

Note of the change: Update SRA2021-G11-项目计划v1.1.0.mpp

Last finish stays 2021-07-01. Complete tasks 155 → 158.

Changed:

| ID | Task | Start | Finish | Complete | Total float | Other |
| --- | --- | --- | --- | --- | --- | --- |
| 1 | **渔乐生活APP项目开发** |  |  |  |  | was named 渔乎APP项目开发 |
| 195 | G11小组例会 | 2021-06-27 A | 2021-06-27 A | 0% → 100% | 0d → none |  |
| 196 | 整合设计文档 | 2021-06-28 A | 2021-06-30 A | 0% → 100% | 0d → none |  |
| 197 | 项目收尾 | 2021-07-01 A | 2021-07-01 A | 0% → 100% | 0d → none |  |

## Version 23 (saved 2021-07-01, file SRA2021-G11-项目计划v1.1.0.mpp)

Note of the change: 终评更新

Last finish stays 2021-07-01.

Changed:

| ID | Task | Start | Finish | Duration | Total float | Predecessors | Other |
| --- | --- | --- | --- | --- | --- | --- | --- |
| 4 | G11小组成立 |  |  |  |  | none → 3 |  |
| 5 | 确定待开发项目 |  |  |  |  | none → 4 |  |
| 6 | G11小组第一次例会 |  |  |  |  | none → 5 |  |
| 7 | 软件环境配置 |  |  |  |  | none → 4 |  |
| 8 | 确定成员大致分工 |  |  |  |  | none → 5 |  |
| 10 | 进一步研究问题 |  |  |  |  | none → 8 |  |
| 12 | 技术可行性分析 |  |  |  |  | none → 10 | resources 沈瑞杰 → 张景雄 |
| 13 | 操作可行性分析 |  |  |  |  |  | resources 伊君琛 → 黄文涛 |
| 14 | 法律可行性分析 |  |  |  |  | none → 10 |  |
| 15 | 整合可行性分析报告 |  |  |  |  |  | resources 沈瑞杰; 伊君琛 → 沈瑞杰 |
| 16 | **项目开发计划** |  | 2021-03-13 A → 2021-03-19 A (+6d) | 0.25d? → 5.25d |  |  |  |
| 18 | 编排甘特图 | 2021-03-12 A → 2021-03-13 A (+1d) | 2021-03-13 A → 2021-03-14 A (+1d) |  |  |  |  |
| 19 | 编写项目开发计划、项目章程 | 2021-03-12 A → 2021-03-13 A (+1d) | 2021-03-12 A → 2021-03-13 A (+1d) |  |  |  |  |
| 20 | 风险管理计划 | 2021-03-12 A → 2021-03-14 A (+2d) | 2021-03-12 A → 2021-03-14 A (+2d) |  |  |  | resources 梅一枝 → 沈瑞杰 |
| 21 | 配置管理计划 | 2021-03-12 A → 2021-03-14 A (+2d) | 2021-03-12 A → 2021-03-14 A (+2d) |  |  |  | resources 梅一枝 → 伊君琛 |
| 22 | 质量保证计划 | 2021-03-12 A → 2021-03-15 A (+3d) | 2021-03-12 A → 2021-03-15 A (+3d) |  |  |  |  |
| 23 | 沟通管理计划 | 2021-03-12 A → 2021-03-15 A (+3d) | 2021-03-12 A → 2021-03-15 A (+3d) |  |  |  | resources 梅一枝 → 黄文涛 |
| 24 | 成本管理计划 | 2021-03-12 A → 2021-03-16 A (+4d) | 2021-03-12 A → 2021-03-16 A (+4d) |  |  |  | resources 梅一枝 → 沈瑞杰 |
| 25 | 资源管理计划 | 2021-03-12 A → 2021-03-17 A (+5d) | 2021-03-12 A → 2021-03-17 A (+5d) |  |  |  | resources 沈瑞杰 → 黄文涛 |
| 26 | 采购管理计划 | 2021-03-12 A → 2021-03-18 A (+6d) | 2021-03-12 A → 2021-03-18 A (+6d) |  |  |  | resources 沈瑞杰 → 张景雄 |
| 27 | 范围管理计划 | 2021-03-12 A → 2021-03-19 A (+7d) | 2021-03-12 A → 2021-03-19 A (+7d) |  |  |  |  |
| 28 | 整合项目开发计划 | 2021-03-13 A → 2021-03-19 A (+6d) | 2021-03-13 A → 2021-03-19 A (+6d) |  |  |  |  |
| 29 | **项目计划阶段整合** | 2021-03-14 A → 2021-03-20 A (+6d) | 2021-03-14 A → 2021-03-24 A (+10d) | 2h? → 36h |  |  |  |
| 30 | 文档、甘特图修订 | 2021-03-14 A → 2021-03-20 A (+6d) | 2021-03-14 A → 2021-03-21 A (+7d) | 1d? → 2d? |  |  | constraint none → finish no earlier than 2021-03-21; resources 沈瑞杰; 伊君琛; 张景雄 → 沈瑞杰; 张景雄 |
| 31 | ppt制作 | 2021-03-14 A → 2021-03-22 A (+8d) | 2021-03-14 A → 2021-03-23 A (+9d) | 1d? → 2d? |  |  | constraint none → finish no earlier than 2021-03-23 |
| 32 | G11小组例会 | 2021-03-14 A → 2021-03-24 A (+10d) | 2021-03-14 A → 2021-03-24 A (+10d) |  |  |  |  |
| 40 | 确认《前景与范围文档》 |  |  |  |  |  | resources G11小组 → 沈瑞杰 |
| 41 | 修改《前景与范围文档》 |  |  |  |  |  | resources 黄文涛 → 黄文涛; 伊君琛 |
| 44 | **选择信息的来源** |  | 2021-04-14 A → 2021-04-14 |  | none → 0d |  | resources 梅一枝; 沈瑞杰 → none |
| 45 | 识别用户群 |  |  |  |  |  | resources 伊君琛 → 张景雄 |
| 46 | 确定用户代表 |  |  | 1d → 0d |  |  | resources 伊君琛 → 黄文涛 |
| 47 | 选择产品代言人 |  |  |  |  |  | resources 张景雄 → 梅一枝 |
| 48 | 识别直接用户需求（延后） |  |  |  |  |  | resources 黄文涛 → 张景雄 |
| 53 | 识别管理员需求 |  |  |  |  |  | resources 黄文涛 → 张景雄 |
| 54 | 识别约钓用户代表需求 |  |  |  |  |  | resources G11小组 → 伊君琛 |
| 64 | 需求建模 |  |  |  |  |  | resources 伊君琛; 张景雄 → 伊君琛 |
| 65 | 需求细化 |  |  |  |  |  | resources 黄文涛; 伊君琛; 沈瑞杰 → 沈瑞杰 |
| 68 | ER图创建 |  |  |  |  |  | resources 黄文涛; 张景雄 → 黄文涛 |
| 73 | 建立子系统 | 2021-04-30 A → 2021-04-29 A (-1d) | 2021-04-30 A → 2021-04-29 A (-1d) |  |  |  |  |
| 74 | **编写需求规格说明书** |  |  | 32h? → 16h |  |  |  |
| 77 | 测试需求 |  |  |  |  |  | resources G11小组 → 黄文涛 |
| 78 | 编写用例说明 |  |  | 1d? → 0d? |  |  | resources 黄文涛 → 张景雄 |
| 79 | 确定优先级 |  |  |  |  |  | resources 黄文涛 → 梅一枝 |
| 80 | 原型修改 |  |  |  |  | none → 72 |  |
| 85 | 更新需求优先级 |  |  |  |  | none → 81 | resources 梅一枝 → 张景雄 |
| 89 | 后向跟踪 |  |  |  |  |  | resources 沈瑞杰 → 梅一枝 |
| 92 | G11小组例会 |  |  |  |  |  | resources 黄文涛 → G11小组 |
| 102 | 更新需求规格说明书 |  |  |  |  |  | resources G11小组 → 黄文涛 |
| 104 | 测试需求 |  |  |  |  |  | resources G11小组 → 黄文涛 |
| 106 | 原型确认 |  |  |  |  |  | resources G11小组 → 张景雄 |
| 110 | 后向跟踪 |  |  |  |  |  | resources 沈瑞杰 → 伊君琛 |
| 118 | 更新需求建模 |  |  |  |  |  | resources 张景雄 → 沈瑞杰 |
| 126 | 测试需求 |  |  |  |  |  | resources G11小组 → 黄文涛 |
| 130 | 更新需求基线 |  |  |  |  |  | resources 梅一枝 → 伊君琛 |
| 132 | 后向跟踪 |  |  |  |  |  | resources 沈瑞杰 → 张景雄 |
| 134 | 更新变更控制 |  |  |  |  |  | resources 伊君琛 → 梅一枝 |
| 138 | 用户打分 |  |  |  |  |  | resources G11小组 → 梅一枝 |
| 143 | G11小组例会 |  |  |  |  |  | resources 黄文涛 → G11小组 |
| 144 | 数据字典更新 |  |  |  |  |  | resources 黄文涛; 张景雄 → 张景雄 |
| 153 | 更新需求基线 |  |  |  |  |  | resources 梅一枝 → 张景雄 |
| 155 | 后向跟踪 |  |  |  |  |  | resources 沈瑞杰 → 梅一枝 |
| 156 | 前向跟踪 |  |  |  |  |  | resources 张景雄 → 沈瑞杰 |
| 157 | 更新变更控制 |  |  |  |  |  | resources 伊君琛 → 沈瑞杰 |
| 166 | 数据字典更新 |  |  |  |  |  | resources 黄文涛; 张景雄 → 张景雄 |
| 175 | 更新需求基线 |  |  |  |  |  | resources 梅一枝 → 张景雄 |
| 178 | 前向跟踪 |  |  |  |  |  | resources 张景雄 → 梅一枝 |
| 185 | 需求影响分析报告 |  |  |  |  |  | resources 伊君琛; 张景雄 → 张景雄 |
